# NOVOZYMES DB SEPHAROSE FF ADDITIONAL WORK DEC 2015

Schedule from MS Project XML, 2015-11-30 to 2016-03-25, 7.5 hours a day, costs in £.
HP

## Calendars

- Standard: Mon-Fri 09:00-12:00, 13:00-17:30; Sat-Sun off. Exceptions (off unless hours are given): 2015-12-24 to 2016-01-01.

## Resources

| Resource | Rate |
| --- | --- |
| ARM | 216 |
| CRM | 206 |
| DRS | 154 |
| CRS | 154 |
| QARM | 296 |
| IOMPC | 147 |
| IOMQAM | 206 |
| IOMQCM | 206 |
| IOMPM | 206 |
| IOMQCS | 147 |
| IOMQAS | 147 |
| ARS | 154 |
| CRA | 108 |
| DRA | 113 |
| DRM | 216 |
| IOMPA | 108 |
| IOMQCA | 108 |

## Schedule

| ID | WBS | Task | Type | Duration | Start | Finish | Predecessors | Total slack | Constraint | Resources | Work | Cost |
| --- | --- | --- | --- | --- | --- | --- | --- | --- | --- | --- | --- | --- |
| 1 | 1 | **Manufacture of 2 additional DB Sepharose FF batches** |  | 75.87d | 2015-11-30 09:00 | 2016-03-23 16:30 |  | 0d |  |  | 142.4h | 25,331.7 |
| 2 | 1.1 | **Sepharose 6FF sourcing** |  | 12d | 2015-11-30 09:00 | 2015-12-15 17:30 |  | 0d |  |  | 1.95h | 300.3 |
| 3 | 1.1.1 | Sourcing of 2L of Sepharose 6FF |  | 2w | 2015-11-30 09:00 | 2015-12-11 17:30 |  | 0d | start no earlier than 2015-11-30 09:00 |  |  |  |
| 4 | 1.1.2 | Ship sample to IoM |  | 2d | 2015-12-14 09:00 | 2015-12-15 17:30 | 3 | 0d |  | CRS [13%] | 1.95h | 300.3 |
| 5 | 1.2 | **Synthesis Phase** |  | 63.87d | 2015-12-15 17:30 | 2016-03-23 16:30 | 4 | 0d |  |  | 140.45h | 25,031.4 |
| 6 | 1.2.1 | **Sepharose testing** |  | 2.63d | 2015-12-16 09:00 | 2015-12-18 14:45 |  | 0d |  |  | 28.25h | 3,550 |
| 7 | 1.2.1.1 | Pressure versus flow - 2 batch |  | 1d | 2015-12-16 09:00 | 2015-12-16 17:30 |  | 64.4d |  | CRS | 7.5h | 1,155 |
| 8 | 1.2.1.2 | Non-specific binding - 2 batch |  | 1d | 2015-12-16 09:00 | 2015-12-16 17:30 | 4 | 0d |  | IOMQCA | 7.5h | 810 |
| 9 | 1.2.1.3 | Porosity - 2 batch |  | 1d | 2015-12-17 09:00 | 2015-12-17 17:30 | 8 | 0d |  | IOMQCA | 7.5h | 810 |
| 10 | 1.2.1.4 | Microscopy - 2 batch |  | 0.5d | 2015-12-18 09:00 | 2015-12-18 13:45 | 9 | 0d |  | IOMQCA | 3.75h | 405 |
| 11 | 1.2.1.5 | Review results |  | 1h | 2015-12-18 13:45 | 2015-12-18 14:45 | 10 | 0d |  | CRS; ARM | 2h | 370 |
| 12 | 1.2.2 | **Synthesis of DBA batches** |  | 8d | 2015-12-18 14:45 | 2016-01-08 14:45 |  | 0d |  |  | 46.95h | 7,403.9 |
| 13 | 1.2.2.1 | Synthesis of DBA Batches (x2) (including online ligand density assay) |  | 6d | 2015-12-18 14:45 | 2016-01-06 14:45 | 11 | 0d |  | CRS | 45h | 7,088 |
| 14 | 1.2.2.2 | Ship samples to IoM |  | 2d | 2016-01-06 14:45 | 2016-01-08 14:45 | 13 | 0d |  | CRS [13%] | 1.95h | 315.9 |
| 15 | 1.2.3 | **DB Sepharose batch testing** |  | 4.63d | 2016-01-08 14:45 | 2016-01-15 11:00 |  | 0d |  |  | 43.25h | 5,249 |
| 16 | 1.2.3.1 | Pressure versus flow - 2 batch |  | 1d | 2016-01-08 14:45 | 2016-01-11 14:45 | 14 | 53.77d |  | CRS | 7.5h | 1,215 |
| 17 | 1.2.3.2 | Non-specific binding - 2 batch |  | 1d | 2016-01-08 14:45 | 2016-01-11 14:45 | 14 | 0d |  | IOMQCA | 7.5h | 810 |
| 18 | 1.2.3.3 | Porosity - 2 batch |  | 1d | 2016-01-11 14:45 | 2016-01-12 14:45 | 17 | 0d |  | IOMQCA | 7.5h | 810 |
| 19 | 1.2.3.4 | Microscopy - 2 batch |  | 0.5d | 2016-01-12 14:45 | 2016-01-13 10:00 | 18 | 0d |  | IOMQCA | 3.75h | 405 |
| 20 | 1.2.3.5 | Ligand density assay |  | 1d | 2016-01-13 10:00 | 2016-01-14 10:00 | 19 | 0d |  | IOMQCA | 7.5h | 810 |
| 21 | 1.2.3.6 | Dynamic binding assay |  | 1d | 2016-01-14 10:00 | 2016-01-15 10:00 | 20 | 0d |  | IOMQCA | 7.5h | 810 |
| 22 | 1.2.3.7 | Review results |  | 1h | 2016-01-15 10:00 | 2016-01-15 11:00 | 21 | 0d |  | CRS; ARM | 2h | 389 |
| 23 | 1.2.4 | Meeting 1 |  | 1h | 2016-03-14 11:37 | 2016-03-14 13:37 | 11, 49, 69 | 8.92d |  | ARM; CRS | 2h | 389 |
| 24 | 1.2.5 | Meeting 2 |  | 1h | 2016-03-23 15:30 | 2016-03-23 16:30 | 22, 60, 80 | 1.53d |  | ARM; CRS | 2h | 389 |
| 25 | 1.2.6 | Project management |  | 24d | 2015-12-16 09:00 | 2016-01-27 17:30 | 3 | 41.4d |  | ARM [10%] | 18h | 4,036.5 |
| 26 | 1.2.7 | Contingency | milestone | 0d | 2015-12-15 17:30 | 2015-12-15 17:30 |  | 65.4d | start no earlier than 2015-11-30 09:00 |  |  | 2,301 |
| 27 | 1.2.8 | Consumables |  | 24d | 2015-12-16 09:00 | 2016-01-27 17:30 |  | 41.4d | start no earlier than 2015-11-30 09:00 |  |  | 1,713 |

| ID | WBS | Task | Type | Duration | Start | Finish | Predecessors | Baseline start | Baseline finish | Baseline duration | Total slack | Free slack | Constraint | Resources | Work | Cost | Baseline cost |
| --- | --- | --- | --- | --- | --- | --- | --- | --- | --- | --- | --- | --- | --- | --- | --- | --- | --- |
| 28 | 2 | **Optimisation of synthesis method and assay validation** |  | 40d | 2016-01-15 11:00 | 2016-03-11 11:00 |  |  |  |  | 0d |  |  |  | 307.5h | 52,863.5 |  |
| 29 | 2.1 | Optimisation of synthesis method and assay validation |  | 20d | 2016-01-15 11:00 | 2016-02-12 11:00 | 22 |  |  |  | 10.13d | 0d |  | CRS [75%] | 112.5h | 18,225 |  |
| 30 | 2.2 | Assay optimisation and validation |  | 20d | 2016-01-15 11:00 | 2016-02-12 11:00 | 22 |  |  |  | 30.13d | 0d |  | ARS [75%] | 112.5h | 18,225 |  |
| 31 | 2.3 | Performance testing |  | 20d | 2016-01-15 11:00 | 2016-02-12 11:00 | 22 |  |  |  | 0d |  |  | DRA [50%] | 75h | 8,925 |  |
| 32 | 2.4 | Project management |  | 20d | 2016-01-15 11:00 | 2016-02-12 11:00 | 22 |  |  |  | 30.13d |  |  | ARM [5%] | 7.5h | 1,702.5 |  |
| 33 | 2.5 | Consumables |  | 20d | 2016-02-12 11:00 | 2016-03-11 11:00 | 29 |  |  |  | 10.13d |  |  |  |  | 980 |  |
| 34 | 2.6 | Contingency | milestone | 0d | 2016-02-12 11:00 | 2016-02-12 11:00 | 30 |  |  |  | 30.13d |  |  |  |  | 4,806 |  |
| 35 | 3 | **TT of Manufacturing and Assay Methods** |  | 30.4d | 2016-02-12 09:00 | 2016-03-25 12:00 |  |  |  |  | 0d |  |  |  | 269.65h | 54,090.8 |  |
| 36 | 3.1 | **Scale Up and TT - DB Sepharose FF adsorbent 10L scale** |  | 30.4d | 2016-02-12 09:00 | 2016-03-25 12:00 |  | 2007-12-03 08:30 | 2009-10-29 09:33 | 524.94d | 0d |  |  |  | 269.65h | 54,090.8 | 276,501.11 |
| 37 | 1.2 | **Adsorbent manufacture - TT and Scale up** |  | 5d | 2016-02-12 11:00 | 2016-02-19 11:00 |  | 2007-03-14 17:00 | 2008-06-18 15:32 | 352.87d | 0d |  |  |  | 90h | 20,770 | 14,700 |
| 38 | 3.1.1.1 | Transfer of QC Methods |  | 5d | 2016-02-12 11:00 | 2016-02-19 11:00 | 31 |  |  |  | 0d |  |  | IOMQCM [20%]; ARS [20%]; IOMQCA | 52.5h | 6,810 |  |
| 39 | 3.1.1.2 | Preparation of Validation Documentation |  | 5d | 2016-02-12 11:00 | 2016-02-19 11:00 | 31 |  |  |  | 25.13d |  | start no earlier than 2011-10-31 09:00 | IOMPM [60%]; CRS [20%]; QARM [20%] | 30h | 6,637.5 |  |
| 40 | 3.1.1.3 | Materials ordering |  | 1w | 2016-02-12 11:00 | 2016-02-19 11:00 | 31 |  |  |  | 1.53d | 0d |  | IOMPC [20%] | 7.5h | 1,102.5 |  |
| 41 | 3.1.1.4 | Materials |  | 1w | 2016-02-12 11:00 | 2016-02-19 11:00 | 31 |  |  |  | 25.13d |  |  |  |  | 6,220 |  |
| 42 | 1.2.1 | **Adsorbent TT - 1L Batch** |  | 9.27d | 2016-02-19 11:00 | 2016-03-03 14:00 |  | 2007-04-04 16:31 | 2007-05-09 13:01 | 26.2d | 1.53d |  |  |  | 62.2h | 8,759.65 |  |
| 43 | 1.2.1.1 | **1L TT Batch** |  | 9.27d | 2016-02-19 11:00 | 2016-03-03 14:00 |  | 2007-04-23 13:01 | 2007-05-08 13:01 | 11.73d | 1.53d |  |  |  | 62.2h | 8,759.65 |  |
| 44 | 3.1.2.1.1 | **Sepharose testing** |  | 1.88d | 2016-02-19 11:00 | 2016-02-23 10:07 |  |  |  |  | 1.53d |  |  |  | 15.13h | 2,009 |  |
| 45 | 3.1.2.1.1.1 | Pressure versus flow |  | 0.5d | 2016-02-19 11:00 | 2016-02-19 15:45 | 40 |  |  |  | 1.53d | 0d |  | CRS | 3.75h | 607.5 |  |
| 46 | 3.1.2.1.1.2 | Non-specific binding |  | 0.5d | 2016-02-19 15:45 | 2016-02-22 11:00 | 45 |  |  |  | 1.53d | 0d |  | IOMQCA | 3.75h | 405 |  |
| 47 | 3.1.2.1.1.3 | Porosity |  | 0.5d | 2016-02-22 11:00 | 2016-02-22 15:45 | 46 |  |  |  | 1.53d | 0d |  | IOMQCA | 3.75h | 405 |  |
| 48 | 3.1.2.1.1.4 | Microscopy |  | 0.25d | 2016-02-22 15:45 | 2016-02-23 09:07 | 47 |  |  |  | 1.53d | 0d |  | IOMQCA | 1.88h | 202.5 |  |
| 49 | 3.1.2.1.1.5 | Review results |  | 1h | 2016-02-23 09:07 | 2016-02-23 10:07 | 48 |  |  |  | 1.53d | 0d |  | CRS; ARM | 2h | 389 |  |
| 50 | 3.1.2.1.2 | **Synthesis of DBA batch** |  | 5d | 2016-02-23 10:07 | 2016-03-01 10:07 |  |  |  |  | 1.53d |  |  |  | 24.45h | 3,931.65 |  |
| 51 | 3.1.2.1.2.1 | Synthesis of DBA Batch (including online ligand density assay) |  | 3d | 2016-02-23 10:07 | 2016-02-26 10:07 | 49 |  |  |  | 1.53d | 0d |  | CRS | 22.5h | 3,645 |  |
| 52 | 3.1.2.1.2.2 | Ship samples to CB23 |  | 2d | 2016-02-26 10:07 | 2016-03-01 10:07 | 51 |  |  |  | 1.53d | 0d |  | IOMQCS [13%] | 1.95h | 286.65 |  |

| ID | WBS | Task | Duration | Start | Finish | Predecessors | Baseline start | Baseline finish | Baseline duration | Total slack | Free slack | Constraint | Resources | Work | Cost | Baseline cost |
| --- | --- | --- | --- | --- | --- | --- | --- | --- | --- | --- | --- | --- | --- | --- | --- | --- |
| 53 | 3.1.2.1.3 | **DB Sepharose batch testing** | 2.38d | 2016-03-01 10:07 | 2016-03-03 14:00 |  |  |  |  | 1.53d |  |  |  | 22.63h | 2,819 |  |
| 54 | 3.1.2.1.3.1 | Pressure versus flow | 0.5d | 2016-03-01 10:07 | 2016-03-01 14:52 | 52 |  |  |  | 17.75d |  |  | CRS | 3.75h | 607.5 |  |
| 55 | 3.1.2.1.3.2 | Non-specific binding | 0.5d | 2016-03-01 10:07 | 2016-03-01 14:52 | 52 |  |  |  | 1.53d | 0d |  | IOMQCA | 3.75h | 405 |  |
| 56 | 3.1.2.1.3.3 | Porosity | 0.5d | 2016-03-01 14:52 | 2016-03-02 10:07 | 55 |  |  |  | 1.53d | 0d |  | IOMQCA | 3.75h | 405 |  |
| 57 | 3.1.2.1.3.4 | Microscopy | 0.25d | 2016-03-02 10:07 | 2016-03-02 12:00 | 56 |  |  |  | 1.53d | 0d |  | IOMQCA | 1.88h | 202.5 |  |
| 58 | 3.1.2.1.3.5 | Ligand density assay | 0.5d | 2016-03-02 13:00 | 2016-03-02 16:45 | 57 |  |  |  | 1.53d | 0d |  | IOMQCA | 3.75h | 405 |  |
| 59 | 3.1.2.1.3.6 | Dynamic binding assay | 0.5d | 2016-03-02 16:45 | 2016-03-03 12:00 | 58 |  |  |  | 1.53d | 0d |  | IOMQCA | 3.75h | 405 |  |
| 60 | 3.1.2.1.3.7 | Review results | 1h | 2016-03-03 13:00 | 2016-03-03 14:00 | 59 |  |  |  | 1.53d | 0d |  | CRS; ARM | 2h | 389 |  |
| 61 | 1.2.2 | **Adsorbent 10L scale up batch** | 30.4d | 2016-02-12 09:00 | 2016-03-25 12:00 |  | 2007-04-27 16:30 | 2007-07-30 14:01 | 71.14d | 0d |  |  |  | 117.45h | 24,561.15 | 14,700 |
| 62 | 1.2.2.1 | QA release of Documentation | 5d | 2016-03-03 14:00 | 2016-03-10 14:00 | 60 | 2007-04-27 16:30 | 2007-05-03 16:30 | 4.27d | 1.53d | 0d |  | IOMQAS [50%] | 18.75h | 2,756.25 |  |
| 63 | 1.2.2.2 | **Adsorbent Scale up Batch 1 (10 litres)** | 9.2d | 2016-03-10 14:00 | 2016-03-23 15:30 |  | 2007-05-07 15:32 | 2007-05-22 15:32 | 11.73d | 1.53d |  |  |  | 61.2h | 8,594.4 |  |
| 64 | 3.1.3.2.1 | **Sepharose testing** | 1.82d | 2016-03-10 14:00 | 2016-03-14 11:37 |  |  |  |  | 1.53d |  |  |  | 14.13h | 1,814.5 |  |
| 65 | 3.1.3.2.1.1 | Pressure versus flow | 0.5d | 2016-03-10 14:00 | 2016-03-11 09:15 | 62 |  |  |  | 1.53d | 0d |  | CRS | 3.75h | 607.5 |  |
| 66 | 3.1.3.2.1.2 | Non-specific binding | 0.5d | 2016-03-11 09:15 | 2016-03-11 14:00 | 65 |  |  |  | 1.53d | 0d |  | IOMQCA | 3.75h | 405 |  |
| 67 | 3.1.3.2.1.3 | Porosity | 0.5d | 2016-03-11 14:00 | 2016-03-14 09:15 | 66 |  |  |  | 1.53d | 0d |  | IOMQCA | 3.75h | 405 |  |
| 68 | 3.1.3.2.1.4 | Microscopy | 0.25d | 2016-03-14 09:15 | 2016-03-14 11:07 | 67 |  |  |  | 1.53d | 0d |  | IOMQCA | 1.88h | 202.5 |  |
| 69 | 3.1.3.2.1.5 | Review results | 0.5h | 2016-03-14 11:07 | 2016-03-14 11:37 | 68 |  |  |  | 1.53d | 0d |  | CRS; ARM | 1h | 194.5 |  |
| 70 | 3.1.3.2.2 | **Synthesis of DBA batches** | 5d | 2016-03-14 11:37 | 2016-03-21 11:37 |  |  |  |  | 1.53d |  |  |  | 24.45h | 3,960.9 |  |
| 71 | 3.1.3.2.2.1 | Synthesis of DBA Batches (including online ligand density assay) | 3d | 2016-03-14 11:37 | 2016-03-17 11:37 | 69 |  |  |  | 1.53d | 0d |  | CRS | 22.5h | 3,645 |  |
| 72 | 3.1.3.2.2.2 | Ship samples to IoM | 2d | 2016-03-17 11:37 | 2016-03-21 11:37 | 71 |  |  |  | 1.53d | 0d |  | CRS [13%] | 1.95h | 315.9 |  |
| 73 | 3.1.3.2.3 | **DB Sepharose batch testing** | 2.38d | 2016-03-21 11:37 | 2016-03-23 15:30 |  |  |  |  | 1.53d |  |  |  | 22.63h | 2,819 |  |
| 74 | 3.1.3.2.3.1 | Pressure versus flow | 0.5d | 2016-03-21 11:37 | 2016-03-21 16:22 | 72 |  |  |  | 3.55d |  |  | CRS | 3.75h | 607.5 |  |
| 75 | 3.1.3.2.3.2 | Non-specific binding | 0.5d | 2016-03-21 11:37 | 2016-03-21 16:22 | 72 |  |  |  | 1.53d | 0d |  | IOMQCA | 3.75h | 405 |  |
| 76 | 3.1.3.2.3.3 | Porosity | 0.5d | 2016-03-21 16:22 | 2016-03-22 11:37 | 75 |  |  |  | 1.53d | 0d |  | IOMQCA | 3.75h | 405 |  |
| 77 | 3.1.3.2.3.4 | Microscopy | 0.25d | 2016-03-22 11:37 | 2016-03-22 14:30 | 76 |  |  |  | 1.53d | 0d |  | IOMQCA | 1.88h | 202.5 |  |
| 78 | 3.1.3.2.3.5 | Ligand density assay | 0.5d | 2016-03-22 14:30 | 2016-03-23 09:45 | 77 |  |  |  | 1.53d | 0d |  | IOMQCA | 3.75h | 405 |  |
| 79 | 3.1.3.2.3.6 | Dynamic binding assay | 0.5d | 2016-03-23 09:45 | 2016-03-23 14:30 | 78 |  |  |  | 1.53d | 0d |  | IOMQCA | 3.75h | 405 |  |
| 80 | 3.1.3.2.3.7 | Review results | 1h | 2016-03-23 14:30 | 2016-03-23 15:30 | 79 |  |  |  | 1.53d | 0d |  | CRS; ARM | 2h | 389 |  |
| 81 | 1.8.1 | Project Management (Development and Validation) | 30d | 2016-02-12 11:00 | 2016-03-25 11:00 | 38SS |  |  |  | 0.13d |  | start no earlier than 2015-08-31 09:00 | ARM [10%] | 22.5h | 5,107.5 |  |
| 82 | 3.1.3.4 | Meeting 1 | 1h | 2016-02-12 11:00 | 2016-02-12 12:00 | 38SS |  |  |  | 0d |  |  | ARM; CRM; DRM; IOMQCM; IOMPM | 5h | 1,072 |  |
| 83 | 3.1.3.5 | Meeting 2 | 1h | 2016-03-11 11:00 | 2016-03-11 12:00 | 82SS+20d |  |  |  | 0d |  |  | ARM; CRM; DRM; IOMQCM; IOMPM | 5h | 1,072 |  |
| 84 | 3.1.3.6 | Meeting 3 | 1h | 2016-03-25 11:00 | 2016-03-25 12:00 | 83SS+10d |  |  |  | 0d |  | start no earlier than 2016-03-11 11:00 | ARM; CRM; DRM; IOMQCM; IOMPM | 5h | 1,072 |  |
| 85 | 3.1.3.7 | Contingency | 30d | 2016-02-12 09:00 | 2016-03-24 17:30 |  |  |  |  | 0.4d |  | start no earlier than 2016-02-12 09:00 |  |  | 4,887 |  |
