# New Business

Schedule from MS Project XML, 2015-12-07 to 2016-05-26, costs in $, A marks actual dates.

## Calendars

- Standard: Mon-Fri 08:00-12:00, 13:00-17:00; Sat-Sun off.

## Resources

| Resource | Rate | Cost per use |
| --- | --- | --- |
| Business Advisor | 20 | 75 |
| Peers | 200 |  |
| Lawyer |  |  |
| Government Agency |  |  |
| Manager | 40 | 120 |
| Owners |  |  |
| Accountant | 30 | 100 |
| Banker |  |  |
| Information Services |  |  |

## Schedule

| ID | WBS | Task | Type | Duration | Start | Finish | Predecessors | Complete | Remaining | Total slack | Free slack | Resources | Work | Actual work | Cost | Actual cost |
| --- | --- | --- | --- | --- | --- | --- | --- | --- | --- | --- | --- | --- | --- | --- | --- | --- |
| 1 | 1 | **Phase 1 - Strategic Plan** |  | 23d | 2015-12-07 A | 2016-01-06 |  | 25% | 17.21d | 101d |  | Accountant | 262h | 67.12h | 11,550 | 2,964.31 |
| 2 | 1.1 | **Self-Assessment** |  | 3d | 2015-12-07 A | 2015-12-09 |  | 97% | 0.1d | 121d |  |  | 32h | 30.4h | 2,565 | 2,416 |
| 3 | 1.1.1 | Define business vision |  | 1d | 2015-12-07 A | 2015-12-07 A |  | 100% |  |  |  | Manager | 8h | 8h | 440 | 440 |
| 4 | 1.1.2 | Identify available skills, information and support |  | 1d | 2015-12-08 A | 2015-12-08 | 3 | 90% | 0.1d | 122d |  | Business Advisor; Manager | 16h | 14.4h | 1,685 | 1,536 |
| 5 | 1.1.3 | Decide whether to proceed |  | 1d | 2015-12-09 A | 2015-12-09 A | 4 | 100% |  |  |  | Manager | 8h | 8h | 440 | 440 |
| 6 | 1.2 | **Define the Opportunity** |  | 10d | 2015-12-10 A | 2015-12-23 |  | 42% | 5.75d | 0.15d |  |  | 96h | 34h | 4,410 | 235 |
| 7 | 1.2.1 | Research the market and competition |  | 1d | 2015-12-10 A | 2015-12-10 A | 5 | 100% |  |  |  | Business Advisor | 8h | 8h | 235 | 235 |
| 8 | 1.2.2 | Interview owners of similar businesses |  | 5d | 2015-12-11 A | 2015-12-17 | 7 | 65% | 1.75d | 0.15d | 0d | Owners | 40h | 26h |  |  |
| 9 | 1.2.3 | Identify needed resources |  | 2d | 2015-12-18 | 2015-12-21 | 8 |  |  | 0.15d | 0d | Business Advisor; Peers | 32h |  | 3,595 |  |
| 10 | 1.2.4 | Identify operating cost elements |  | 2d | 2015-12-22 | 2015-12-23 | 9 |  |  | 0.15d | 0d | Accountant | 16h |  | 580 |  |
| 11 | 1.3 | **Evaluate Business Approach** |  | 4d | 2015-12-24 | 2015-12-29 |  |  |  | 0.15d |  |  | 32h |  | 1,760 |  |
| 12 | 1.3.1 | Define new entity requirements |  | 1d | 2015-12-24 | 2015-12-24 | 10 |  |  | 0.15d | 0d | Manager | 8h |  | 440 |  |
| 13 | 1.3.2 | Identify on-going business purchase opportunities |  | 1d | 2015-12-25 | 2015-12-25 | 12 |  |  | 0.15d | 0d | Manager | 8h |  | 440 |  |
| 14 | 1.3.3 | Research franchise possibilities |  | 1d | 2015-12-28 | 2015-12-28 | 13 |  |  | 0.15d | 0d | Manager | 8h |  | 440 |  |
| 15 | 1.3.4 | Summarize business approach |  | 1d | 2015-12-29 | 2015-12-29 | 14 |  |  | 0.15d | 0d | Manager | 8h |  | 440 |  |
| 16 | 1.4 | **Evaluate Potential Risks and Rewards** |  | 7d | 2015-12-25 A | 2016-01-04 |  | 2% | 6.89d | 103d |  |  | 80h | 1.2h | 2,535 | 168 |
| 17 | 1.4.1 | Assess market size and stability |  | 2d | 2015-12-25 | 2015-12-28 | 12 |  |  | 104d | 0d | Business Advisor | 16h |  | 395 |  |
| 18 | 1.4.2 | Estimate the competition |  | 1d | 2015-12-29 | 2015-12-29 | 17 |  |  | 104d | 0d | Business Advisor | 8h |  | 235 |  |
| 19 | 1.4.3 | Assess needed resource availability |  | 2d | 2015-12-30 | 2015-12-31 | 18 |  |  | 104d | 0d | Business Advisor | 16h |  | 395 |  |
| 20 | 1.4.4 | Evaluate realistic initial market share |  | 1d | 2016-01-01 | 2016-01-01 | 19 |  |  | 104d |  | Business Advisor | 8h |  | 235 |  |
| 21 | 1.4.5 | Determine financial requirements |  | 2d | 2015-12-30 | 2015-12-31 | 15 |  |  | 0.15d | 0d | Business Advisor | 16h |  | 395 |  |
| 22 | 1.4.6 | Review personal suitability |  | 1d | 2016-01-01 | 2016-01-01 | 21 |  |  | 0.15d | 0d | Manager | 8h |  | 440 |  |
| 23 | 1.4.7 | Evaluate initial profitability |  | 1d | 2016-01-04 A | 2016-01-04 | 22 | 15% | 0.85d | 0d |  | Manager | 8h | 1.2h | 440 | 168 |
| 24 | 1.5 | Review and modify the strategic plan |  | 2d | 2016-01-05 | 2016-01-06 | 23 |  |  | 0d |  |  | 16h |  |  |  |
| 25 | 1.6 | Confirm decision to proceed | milestone | 0d | 2016-01-06 | 2016-01-06 | 24 |  |  | 0d |  |  |  |  |  |  |

| ID | WBS | Task | Type | Duration | Start | Finish | Predecessors | Total slack | Resources | Work | Cost |
| --- | --- | --- | --- | --- | --- | --- | --- | --- | --- | --- | --- |
| 26 | 2 | **Phase 2 - Define the Business Opportunity** |  | 27d | 2016-01-07 | 2016-02-12 |  | 0d |  | 208h | 7,765 |
| 27 | 2.1 | **Define the Market** |  | 13d | 2016-01-07 | 2016-01-25 |  | 0d |  | 104h | 2,530 |
| 28 | 2.1.1 | Access available information |  | 1d | 2016-01-07 | 2016-01-07 | 25 | 0d | Business Advisor | 8h | 235 |
| 29 | 2.1.2 | Create market analysis plan |  | 2d | 2016-01-08 | 2016-01-11 | 28 | 0d | Business Advisor | 16h | 395 |
| 30 | 2.1.3 | Implement market analysis plan |  | 5d | 2016-01-12 | 2016-01-18 | 29 | 0d | Business Advisor | 40h | 875 |
| 31 | 2.1.4 | Identify competition |  | 2d | 2016-01-19 | 2016-01-20 | 30 | 0d | Business Advisor | 16h | 395 |
| 32 | 2.1.5 | Summarize the market |  | 2d | 2016-01-21 | 2016-01-22 | 31 | 0d | Business Advisor | 16h | 395 |
| 33 | 2.1.6 | Identify target market niche |  | 1d | 2016-01-25 | 2016-01-25 | 32 | 0d | Business Advisor | 8h | 235 |
| 34 | 2.2 | **Identify Needed Materials and Supplies** |  | 7d | 2016-01-26 | 2016-02-03 |  | 0d |  | 56h | 2,960 |
| 35 | 2.2.1 | Select a business approach (from "Evaluate Business Approach" above) |  | 2d | 2016-01-26 | 2016-01-27 | 28SS, 33 | 0d | Manager | 16h | 760 |
| 36 | 2.2.2 | Identify management staff resources |  | 1d | 2016-01-28 | 2016-01-28 | 35 | 0d | Manager | 8h | 440 |
| 37 | 2.2.3 | Identify staffing requirements |  | 1d | 2016-01-29 | 2016-01-29 | 36 | 0d | Manager | 8h | 440 |
| 38 | 2.2.4 | Identify needed raw materials |  | 1d | 2016-02-01 | 2016-02-01 | 37 | 0d | Manager | 8h | 440 |
| 39 | 2.2.5 | Identify needed utilities |  | 1d | 2016-02-02 | 2016-02-02 | 38 | 0d | Manager | 8h | 440 |
| 40 | 2.2.6 | Summarize operating expenses and financial projections |  | 1d | 2016-02-03 | 2016-02-03 | 39 | 0d | Manager | 8h | 440 |
| 41 | 2.3 | **Evaluate Potential Risks and Rewards** |  | 6d | 2016-02-04 | 2016-02-11 |  | 0d |  | 48h | 2,100 |
| 42 | 2.3.1 | Assess market size and stability |  | 2d | 2016-02-04 | 2016-02-05 | 40 | 0d | Manager | 16h | 760 |
| 43 | 2.3.2 | Assess needed resources availability |  | 2d | 2016-02-08 | 2016-02-09 | 42 | 0d | Manager | 16h | 760 |
| 44 | 2.3.3 | Forecast financial returns |  | 2d | 2016-02-10 | 2016-02-11 | 43 | 0d | Accountant | 16h | 580 |
| 45 | 2.4 | Review and modify the business opportunity |  | 1d | 2016-02-12 | 2016-02-12 | 44 | 0d |  |  |  |
| 46 | 2.5 | Confirm decision to proceed | milestone | 0d | 2016-02-12 | 2016-02-12 | 45 | 0d | Business Advisor; Peers; Lawyer; Accountant |  | 175 |
| 47 | 3 | **Phase 3 - Plan for Action** |  | 21d | 2016-02-15 | 2016-03-14 |  | 0d |  | 184h | 5,465 |
| 48 | 3.1 | **Develop Detailed 5-Year Business Plan** |  | 21d | 2016-02-15 | 2016-03-14 |  | 0d |  | 184h | 5,465 |
| 49 | 3.1.1 | Describe the vision and opportunity |  | 1d | 2016-02-15 | 2016-02-15 | 46 | 0d | Business Advisor | 8h | 235 |
| 50 | 3.1.2 | List assumptions |  | 1d | 2016-02-16 | 2016-02-16 | 49 | 0d | Business Advisor | 8h | 235 |
| 51 | 3.1.3 | Describe the market |  | 1d | 2016-02-17 | 2016-02-17 | 50 | 0d | Business Advisor | 8h | 235 |
| 52 | 3.1.4 | Describe the new business |  | 1d | 2016-02-18 | 2016-02-18 | 51 | 0d | Business Advisor | 8h | 235 |
| 53 | 3.1.5 | Describe strengths, weaknesses, assets and threats |  | 1d | 2016-02-19 | 2016-02-19 | 52 | 0d | Business Advisor | 8h | 235 |
| 54 | 3.1.6 | Estimate sales volume during startup period |  | 1d | 2016-02-22 | 2016-02-22 | 53 | 0d | Business Advisor; Accountant | 16h | 575 |
| 55 | 3.1.7 | Forecast operating costs |  | 1d | 2016-02-23 | 2016-02-23 | 54 | 0d | Business Advisor; Accountant | 16h | 575 |
| 56 | 3.1.8 | Establish pricing strategy |  | 1d | 2016-02-24 | 2016-02-24 | 55 | 0d | Business Advisor | 8h | 235 |
| 57 | 3.1.9 | Forecast revenue |  | 1d | 2016-02-25 | 2016-02-25 | 56 | 0d | Business Advisor | 8h | 235 |
| 58 | 3.1.10 | Summarize pro-forma financial statement |  | 2d | 2016-02-26 | 2016-02-29 | 57 | 0d | Business Advisor | 16h | 395 |
| 59 | 3.1.11 | Develop break-even analysis |  | 1d | 2016-03-01 | 2016-03-01 | 58 | 0d | Business Advisor | 8h | 235 |
| 60 | 3.1.12 | Develop cash-flow projection |  | 1d | 2016-03-02 | 2016-03-02 | 59 | 0d | Business Advisor | 8h | 235 |
| 61 | 3.1.13 | Identify licensing and permitting requirements |  | 1d | 2016-03-03 | 2016-03-03 | 60 | 0d | Business Advisor | 8h | 235 |
| 62 | 3.1.14 | Develop startup plan |  | 2d | 2016-03-04 | 2016-03-07 | 61 | 0d | Business Advisor | 16h | 395 |
| 63 | 3.1.15 | Develop sales and marketing strategy |  | 1d | 2016-03-08 | 2016-03-08 | 62 | 0d | Business Advisor | 8h | 235 |
| 64 | 3.1.16 | Develop distribution structure |  | 1d | 2016-03-09 | 2016-03-09 | 63 | 0d | Business Advisor | 8h | 235 |
| 65 | 3.1.17 | Describe risks and opportunities |  | 2d | 2016-03-10 | 2016-03-11 | 64 | 0d | Business Advisor | 16h | 395 |
| 66 | 3.1.18 | Publish the business plan |  | 1d | 2016-03-14 | 2016-03-14 | 65 | 0d | Business Advisor | 8h | 235 |
| 67 | 3.1.19 | Confirm decision to proceed | milestone | 0d | 2016-03-14 | 2016-03-14 | 66 | 0d | Business Advisor |  | 75 |

| ID | WBS | Task | Type | Duration | Start | Finish | Predecessors | Total slack | Free slack | Resources | Work | Cost |
| --- | --- | --- | --- | --- | --- | --- | --- | --- | --- | --- | --- | --- |
| 68 | 4 | **Phase 4 - Proceed With Startup Plan** |  | 53d | 2016-03-15 | 2016-05-26 |  | 0d |  |  | 736h | 20,560 |
| 69 | 4.1 | Choose a location |  | 1d | 2016-03-15 | 2016-03-15 | 67 | 0d |  |  |  |  |
| 70 | 4.2 | **Establish Business Structure** |  | 24d | 2016-03-16 | 2016-04-18 |  | 0d |  |  | 296h | 4,360 |
| 71 | 4.2.1 | **Choose a Name** |  | 2d | 2016-03-16 | 2016-03-17 |  | 0d |  |  | 16h |  |
| 72 | 4.2.1.1 | Identify implications |  | 1d | 2016-03-16 | 2016-03-16 | 69 | 0d |  | Lawyer | 8h |  |
| 73 | 4.2.1.2 | Research name availability |  | 1d | 2016-03-17 | 2016-03-17 | 72 | 0d |  | Lawyer | 8h |  |
| 74 | 4.2.2 | **Choose a Bank** |  | 5d | 2016-03-18 | 2016-03-24 |  | 0d |  |  | 40h |  |
| 75 | 4.2.2.1 | Establish accounts |  | 4d | 2016-03-18 | 2016-03-23 | 73 | 0d |  | Banker | 32h |  |
| 76 | 4.2.2.2 | Establish line of credit |  | 1d | 2016-03-24 | 2016-03-24 | 75 | 0d |  | Banker | 8h |  |
| 77 | 4.2.3 | Choose legal representation |  | 1d | 2016-03-25 | 2016-03-25 | 75SS, 76 | 0d |  | Lawyer | 8h |  |
| 78 | 4.2.4 | Select business tax-basis category |  | 2d | 2016-03-28 | 2016-03-29 | 77 | 0d |  | Lawyer; Accountant | 32h | 580 |
| 79 | 4.2.5 | Choose capital funding source |  | 2d | 2016-03-30 | 2016-03-31 | 78 | 0d |  | Manager | 16h | 760 |
| 80 | 4.2.6 | Commit capital funding | milestone | 0d | 2016-03-31 | 2016-03-31 | 79 | 13d | 0d | Manager |  | 120 |
| 81 | 4.2.7 | **Establish the Operating Control Base** |  | 12d | 2016-04-01 | 2016-04-18 |  | 13d |  |  | 144h | 2,035 |
| 82 | 4.2.7.1 | Choose and set up the accounting system |  | 2d | 2016-04-01 | 2016-04-04 | 79, 80 | 13d | 0d | Accountant | 16h | 580 |
| 83 | 4.2.7.2 | Obtain required licenses and permits |  | 4d | 2016-04-05 | 2016-04-08 | 82 | 13d | 0d | Lawyer; Government Agency | 64h |  |
| 84 | 4.2.7.3 | Obtain needed insurance |  | 4d | 2016-04-11 | 2016-04-14 | 83 | 13d | 0d | Accountant | 32h | 1,060 |
| 85 | 4.2.7.4 | Establish security plan |  | 2d | 2016-04-15 | 2016-04-18 | 84 | 13d | 0d | Business Advisor; Lawyer | 32h | 395 |
| 86 | 4.2.8 | **Develop Marketing Program** |  | 4d | 2016-03-17 | 2016-03-22 |  | 32d |  |  | 40h | 865 |
| 87 | 4.2.8.1 | Establish an advertising program |  | 2d | 2016-03-17 | 2016-03-18 | 73SS | 32d | 0d | Business Advisor | 16h | 395 |
| 88 | 4.2.8.2 | Develop a logo |  | 1d | 2016-03-21 | 2016-03-21 | 87 | 32d | 0d | Business Advisor; Lawyer | 16h | 235 |
| 89 | 4.2.8.3 | Order promotional materials |  | 1d | 2016-03-22 | 2016-03-22 | 88 | 32d | 19d | Business Advisor | 8h | 235 |
| 90 | 4.3 | **Provide Physical Facilities** |  | 15d | 2016-04-19 | 2016-05-09 |  | 13d |  |  | 120h | 2,920 |
| 91 | 4.3.1 | Secure operation space |  | 5d | 2016-04-19 | 2016-04-25 | 85, 89 | 13d | 0d | Lawyer | 40h |  |
| 92 | 4.3.2 | Select computer network hardware |  | 1d | 2016-04-26 | 2016-04-26 | 91 | 13d | 0d | Information Services | 8h |  |
| 93 | 4.3.3 | Select computer software |  | 1d | 2016-04-27 | 2016-04-27 | 92 | 13d | 0d | Information Services | 8h |  |
| 94 | 4.3.4 | Establish utilities |  | 3d | 2016-04-28 | 2016-05-02 | 93 | 13d | 0d | Manager | 24h | 1,080 |
| 95 | 4.3.5 | Provide furniture and equipment |  | 4d | 2016-05-03 | 2016-05-06 | 94 | 13d | 0d | Manager | 32h | 1,400 |
| 96 | 4.3.6 | Move in |  | 1d | 2016-05-09 | 2016-05-09 | 95 | 13d |  | Manager | 8h | 440 |

| ID | WBS | Task | Type | Duration | Start | Finish | Predecessors | Total slack | Resources | Work | Cost |
| --- | --- | --- | --- | --- | --- | --- | --- | --- | --- | --- | --- |
| 97 | 4.4 | **Provide Staffing** |  | 40d | 2016-04-01 | 2016-05-26 |  | 0d |  | 320h | 13,160 |
| 98 | 4.4.1 | Interview and test candidates |  | 14d | 2016-04-01 | 2016-04-20 | 79 | 0d | Manager | 112h | 4,600 |
| 99 | 4.4.2 | Hire staff |  | 10d | 2016-04-21 | 2016-05-04 | 98 | 0d | Manager | 80h | 3,320 |
| 100 | 4.4.3 | Train staff |  | 16d | 2016-05-05 | 2016-05-26 | 99 | 0d | Manager | 128h | 5,240 |
| 101 | 4.5 | Start up the business | milestone | 0d | 2016-05-26 | 2016-05-26 | 96, 100 | 0d | Manager |  | 120 |
