# Children's Book Schedule

Schedule from MS Project, 2012-04-02 to 2012-11-09, costs in $.
Lucerne Publishing

## Calendars

- Standard: Mon-Fri 08:00-12:00, 13:00-17:00; Sat-Sun off.
- Monday-Wednesday: Mon-Wed 08:00-12:00, 13:00-17:00; Thu-Sun off.

## Resources

| Resource | Rate | Notes |
| --- | --- | --- |
| Carole Poland | 52.5 |  |
| Copyeditors | 45 |  |
| Dan Jump | 75.5 |  |
| Hany Morcos | 38.75 |  |
| Jane Dow | 55 |  |
| John Evans | 69.5 |  |
| Jun Cao | 42 |  |
| Katie Jordan | 48 |  |
| Luis Sousa | 70 |  |
| Printing Service |  |  |
| Robin Wood | 44 |  |
| Sharon Salavaria | 27.5 | Sharon's standard pay rate is adjusted for her half-time work schedule. |
| Toby Nixon | 67.5 |  |
| Travel |  |  |
| Vikas Jain | 22 |  |
| William Flash |  |  |
| Zac Woodall | 55 |  |
| Tad Orman |  |  |
| Color Setting Services |  |  |

## Schedule

| ID | WBS | Task | Type | Duration | Start | Finish | Predecessors | Total slack | Constraint | Resources | Work | Cost |
| --- | --- | --- | --- | --- | --- | --- | --- | --- | --- | --- | --- | --- |
| 1 | 1 | **Acquisition** |  | 28d | 2012-04-02 | 2012-05-09 |  | 0d |  |  | 220h | 7,200 |
| 2 | 1.1 | Manuscript received | milestone | 0d | 2012-04-02 | 2012-04-02 |  | 0d |  |  |  |  |
| 3 | 1.2 | Content edit |  | 15d | 2012-04-02 | 2012-04-25 | 2 | 0d |  | Carole Poland | 120h | 6,300 |
| 4 | 1.3 | Author review of content edit |  | 10d | 2012-04-26 | 2012-05-09 | 3 | 0d |  | Tad Orman; Copyeditors [25%] | 100h | 900 |
| 5 | 1.4 | Handoff to Editorial | milestone | 0d | 2012-05-09 | 2012-05-09 | 4 | 0d |  | Carole Poland |  |  |
| 6 | 2 | **Editorial** |  | 37.5d | 2012-05-10 | 2012-07-02 | 1 | 0d |  |  | 420h | 14,800 |
| 7 | 2.1 | Organize manuscript for copyedit |  | 5d | 2012-05-10 | 2012-05-16 |  | 0d |  | Hany Morcos | 40h | 1,550 |
| 8 | 2.2 | Copyedit |  | 20d | 2012-05-17 | 2012-06-13 | 7 | 0d |  | Copyeditors [150%] | 240h | 10,800 |
| 9 | 2.3 | Author review of copyedit |  | 10d | 2012-06-14 | 2012-06-27 | 8 | 0d |  | Tad Orman; Copyeditors [25%] | 100h | 900 |
| 10 | 2.4 | Copyedit incorp |  | 5d | 2012-06-25 | 2012-07-02 | 9FS-2.5% | 0d |  | Hany Morcos | 40h | 1,550 |
| 11 | 2.5 | Handoff to Production | milestone | 0d | 2012-07-02 | 2012-07-02 | 10 | 0d |  | Hany Morcos |  |  |
| 12 | 3 | **Design and Production** |  | 50d | 2012-07-02 | 2012-09-10 | 6 | 0d |  |  | 636h | 30,825 |
| 13 | 3.1 | Set pages |  | 15d | 2012-07-02 | 2012-07-23 |  | 0d |  | Jane Dow | 120h | 6,600 |
| 14 | 3.2 | Interior illustration design |  | 15d | 2012-07-02 | 2012-07-23 | 13SS | 0d |  | Luis Sousa | 120h | 8,400 |
| 15 | 3.3 | **1st Pages review** |  | 25d | 2012-07-23 | 2012-08-27 | 14 | 0d |  |  | 220h | 7,450 |
| 16 | 3.3.1 | Proofread and index |  | 10d | 2012-07-23 | 2012-08-06 |  | 0d | start no earlier than 2012-07-13 | Tad Orman; Copyeditors | 100h | 900 |
| 17 | 3.3.2 | Incorporate 1st Pages review |  | 5d | 2012-08-06 | 2012-08-13 | 16 | 0d |  | Hany Morcos | 40h | 1,550 |
| 18 | 3.3.3 | Send proofed pages to Production | milestone | 0d | 2012-08-13 | 2012-08-13 | 17 | 0d |  | Hany Morcos |  |  |
| 19 | 3.3.4 | Enter page corrections and index |  | 5d | 2012-08-13 | 2012-08-20 | 18 | 0d |  | Jane Dow | 40h | 2,200 |
| 20 | 3.3.5 | Cover design |  | 5d | 2012-08-20 | 2012-08-27 | 19 | 0d |  | Luis Sousa | 40h | 2,800 |
| 21 | 3.4 | **2nd Pages review** |  | 10d | 2012-08-27 | 2012-09-10 |  | 0d |  |  | 120h | 5,575 |
| 22 | 3.4.1 | Proof and review |  | 5d | 2012-08-27 | 2012-09-03 | 20 | 0d |  | Hany Morcos | 40h | 1,550 |
| 23 | 3.4.2 | Send proofed pages to Production | milestone | 0d | 2012-09-03 | 2012-09-03 | 22 | 0d |  | Hany Morcos |  |  |
| 24 | 3.4.3 | Final review |  | 5d | 2012-09-03 | 2012-09-10 | 23 | 0d |  | Jane Dow; Hany Morcos [50%]; Carole Poland [50%] | 80h | 4,025 |

| ID | WBS | Task | Duration | Start | Finish | Predecessors | Total slack | Free slack | Calendar | Resources | Work | Cost |
| --- | --- | --- | --- | --- | --- | --- | --- | --- | --- | --- | --- | --- |
| 25 | 3.5 | **Design book's companion website** | 5d | 2012-08-27 | 2012-09-03 | 15 | 5d |  |  |  | 56h | 2,800 |
| 26 | 3.5.1 | Create mockup | 3d | 2012-08-27 | 2012-08-30 |  | 5d | 0d |  | Luis Sousa | 24h | 1,680 |
| 27 | 3.5.2 | Review with author | 2d | 2012-08-30 | 2012-09-03 | 26 | 5d |  |  | Luis Sousa; Tad Orman | 32h | 1,120 |
| 28 | 4 | **Color prep and printing** | 44d | 2012-09-10 | 2012-11-09 | 25 | 0d |  |  |  | 328h | 310 |
| 29 | 4.1 | Send to color house | 1d | 2012-09-10 | 2012-09-11 | 21 | 0d |  | Monday-Wednesday | Hany Morcos | 8h | 310 |
| 30 | 4.2 | Generate proofs | 10d | 2012-09-11 | 2012-09-25 | 29 | 0d |  |  | Color Setting Services | 80h |  |
| 31 | 4.3 | Print and ship | 30d | 2012-09-28 | 2012-11-09 | 30FS+3d | 0d |  |  | Printing Service | 240h |  |
