# Children's book schedule

Schedule from MS Project, 2012-04-02 to 2012-11-08, costs in $.
Lucerne Publishing

## Calendars

- Standard: Mon-Fri 08:00-12:00, 13:00-17:00; Sat-Sun off. Exceptions (off unless hours are given): 2012-07-04 (Independence Day Holiday).
- Monday-Wednesday: Mon-Wed 08:00-12:00, 13:00-17:00; Thu-Sun off.

## Resources

| Resource | Group | Unit | Rate |
| --- | --- | --- | --- |
| Carole Poland | Editorial |  | 52.5 |
| Copyeditors | Editorial |  | 45 |
| Dan Jump | Design |  | 75.5 |
| Hany Morcos | Editorial |  | 38.75 |
| Jane Dow | Editorial |  | 55 |
| Jun Cao | Editorial |  | 42 |
| Luis Sousa | Design |  | 70 |
| Printing Service | Production |  |  |
| Travel | Other |  |  |
| Tad Orman | Other |  |  |
| Color Setting Services | Production |  |  |
| Bound galley proof | Production | copy | 15 |

## Schedule

| ID | WBS | Task | Type | Duration | Start | Finish | Predecessors | Total slack | Free slack | Constraint | Deadline | Resources | Work | Cost | Editorial Focus |
| --- | --- | --- | --- | --- | --- | --- | --- | --- | --- | --- | --- | --- | --- | --- | --- |
| 1 | 1 | **Editorial staff meeting** |  | 60.12d | 2012-04-09 08:00 | 2012-07-02 09:00 |  | 92.88d |  |  |  |  | 45.5h | 2,223 |  |
| 2 | 1.1 | Editorial staff meeting 1 |  | 1h | 2012-04-09 08:00 | 2012-04-09 09:00 |  | 152.88d |  | start no earlier than 2012-04-09 08:00 |  | Carole Poland; Jun Cao; Hany Morcos; Dan Jump [50%] | 3.5h | 171 |  |
| 3 | 1.2 | Editorial staff meeting 2 |  | 1h | 2012-04-16 08:00 | 2012-04-16 09:00 |  | 147.88d |  | start no earlier than 2012-04-16 08:00 |  | Carole Poland; Jun Cao; Hany Morcos; Dan Jump [50%] | 3.5h | 171 |  |
| 4 | 1.3 | Editorial staff meeting 3 |  | 1h | 2012-04-23 08:00 | 2012-04-23 09:00 |  | 142.88d |  | start no earlier than 2012-04-23 08:00 |  | Carole Poland; Jun Cao; Hany Morcos; Dan Jump [50%] | 3.5h | 171 |  |
| 5 | 1.4 | Editorial staff meeting 4 |  | 1h | 2012-04-30 08:00 | 2012-04-30 09:00 |  | 137.88d |  | start no earlier than 2012-04-30 08:00 |  | Carole Poland; Jun Cao; Hany Morcos; Dan Jump [50%] | 3.5h | 171 |  |
| 6 | 1.5 | Editorial staff meeting 5 |  | 1h | 2012-05-07 08:00 | 2012-05-07 09:00 |  | 132.88d |  | start no earlier than 2012-05-07 08:00 |  | Carole Poland; Jun Cao; Hany Morcos; Dan Jump [50%] | 3.5h | 171 |  |
| 7 | 1.6 | Editorial staff meeting 6 |  | 1h | 2012-05-14 08:00 | 2012-05-14 09:00 |  | 127.88d |  | start no earlier than 2012-05-14 08:00 |  | Carole Poland; Jun Cao; Hany Morcos; Dan Jump [50%] | 3.5h | 171 |  |
| 8 | 1.7 | Editorial staff meeting 7 |  | 1h | 2012-05-21 08:00 | 2012-05-21 09:00 |  | 122.88d |  | start no earlier than 2012-05-21 08:00 |  | Carole Poland; Jun Cao; Hany Morcos; Dan Jump [50%] | 3.5h | 171 |  |
| 9 | 1.8 | Editorial staff meeting 8 |  | 1h | 2012-05-28 08:00 | 2012-05-28 09:00 |  | 117.88d |  | start no earlier than 2012-05-28 08:00 |  | Carole Poland; Jun Cao; Hany Morcos; Dan Jump [50%] | 3.5h | 171 |  |
| 10 | 1.9 | Editorial staff meeting 9 |  | 1h | 2012-06-04 08:00 | 2012-06-04 09:00 |  | 112.88d |  | start no earlier than 2012-06-04 08:00 |  | Carole Poland; Jun Cao; Hany Morcos; Dan Jump [50%] | 3.5h | 171 |  |
| 11 | 1.10 | Editorial staff meeting 10 |  | 1h | 2012-06-11 08:00 | 2012-06-11 09:00 |  | 107.88d |  | start no earlier than 2012-06-11 08:00 |  | Carole Poland; Jun Cao; Hany Morcos; Dan Jump [50%] | 3.5h | 171 |  |
| 12 | 1.11 | Editorial staff meeting 11 |  | 1h | 2012-06-18 08:00 | 2012-06-18 09:00 |  | 102.88d |  | start no earlier than 2012-06-18 08:00 |  | Carole Poland; Jun Cao; Hany Morcos; Dan Jump [50%] | 3.5h | 171 |  |
| 13 | 1.12 | Editorial staff meeting 12 |  | 1h | 2012-06-25 08:00 | 2012-06-25 09:00 |  | 97.88d |  | start no earlier than 2012-06-25 08:00 |  | Carole Poland; Jun Cao; Hany Morcos; Dan Jump [50%] | 3.5h | 171 |  |
| 14 | 1.13 | Editorial staff meeting 13 |  | 1h | 2012-07-02 08:00 | 2012-07-02 09:00 |  | 92.88d |  | start no earlier than 2012-07-02 08:00 |  | Carole Poland; Jun Cao; Hany Morcos; Dan Jump [50%] | 3.5h | 171 |  |
| 15 | 2 | **Acquisition** |  | 30.25d | 2012-04-02 08:00 | 2012-05-14 10:00 |  | 3.62d | 0d |  |  |  | 280h | 9,900 |  |
| 16 | 2.1 | Manuscript received | milestone | 0d | 2012-04-02 08:00 | 2012-04-02 08:00 |  | 3.62d | 0d |  |  |  |  |  |  |
| 17 | 2.2 | Content edit |  | 15d | 2012-04-02 08:00 | 2012-04-26 10:00 | 16 | 3.62d | 0d |  |  | Carole Poland | 120h | 6,300 | Full developmental edit |
| 18 | 2.3 | Author review of content edit |  | 12d | 2012-04-26 10:00 | 2012-05-14 10:00 | 17 | 3.62d | 0d |  |  | Tad Orman; Copyeditors | 160h | 3,600 | Incorp must-fix issues |
| 19 | 2.4 | Handoff to Editorial | milestone | 0d | 2012-05-14 10:00 | 2012-05-14 10:00 | 18 | 3.62d |  |  | 2012-05-25 17:00 | Carole Poland |  |  |  |
| 20 | 3 | **Editorial** |  | 28.88d | 2012-05-14 10:00 | 2012-06-22 09:00 | 15 | 3.62d | 0d |  |  |  | 400h | 15,670 |  |
| 21 | 3.1 | Organize manuscript for copyedit |  | 5d | 2012-05-14 10:00 | 2012-05-21 10:00 |  | 3.62d | 0d |  |  | Hany Morcos; Dan Jump [50%] | 60h | 3,060 | Address outstanding line edit issues |
| 22 | 3.2 | Copyedit |  | 11.25d | 2012-05-21 10:00 | 2012-06-05 12:00 | 21 | 3.62d | 0d |  |  | Copyeditors [200%] | 180h | 8,100 | Style Guide compliance |
| 23 | 3.3 | Author review of copyedit |  | 10d | 2012-06-05 13:00 | 2012-06-19 12:00 | 22 | 3.62d | 0d |  |  | Tad Orman; Copyeditors [25%] | 100h | 900 | Incorp must-fix issues |
| 24 | 3.4 | Copyedit incorp |  | 5d | 2012-06-15 08:00 | 2012-06-22 09:00 | 23FS-2.5% | 3.62d | 0d |  |  | Carole Poland; Dan Jump [50%] | 60h | 3,610 | Incorp must-fix issues |
| 25 | 3.5 | Handoff to Production | milestone | 0d | 2012-06-22 09:00 | 2012-06-22 09:00 | 24 | 3.62d |  |  |  | Hany Morcos |  |  |  |

| ID | WBS | Task | Type | Duration | Start | Finish | Predecessors | Total slack | Free slack | Constraint | Calendar | Resources | Work | Cost |
| --- | --- | --- | --- | --- | --- | --- | --- | --- | --- | --- | --- | --- | --- | --- |
| 26 | 4 | **Design and Production** |  | 53.25d | 2012-06-22 09:00 | 2012-09-06 11:00 | 20 | 1.62d |  |  |  |  | 828h | 43,619 |
| 27 | 4.1 | Set pages |  | 15d | 2012-06-22 09:00 | 2012-07-16 09:00 |  | 3.62d | 0d |  |  | Jane Dow | 120h | 7,590 |
| 28 | 4.2 | Interior illustration design |  | 15.25d | 2012-06-22 09:00 | 2012-07-16 11:00 | 27SS | 3.62d | 0d |  |  | Luis Sousa; Hany Morcos | 240h | 13,050 |
| 29 | 4.3 | **1st Pages review** |  | 25d | 2012-07-16 11:00 | 2012-08-20 11:00 | 28 | 3.62d | 0d |  |  |  | 260h | 10,800 |
| 30 | 4.3.1 | Proofread and index |  | 10d | 2012-07-16 11:00 | 2012-07-30 11:00 |  | 3.62d | 0d | start no earlier than 2012-07-13 08:00 |  | Tad Orman; Copyeditors | 100h | 900 |
| 31 | 4.3.2 | Incorporate 1st Pages review |  | 5d | 2012-07-30 11:00 | 2012-08-06 11:00 | 30 | 3.62d | 0d |  |  | Hany Morcos; Dan Jump [50%] | 60h | 3,060 |
| 32 | 4.3.3 | Send proofed pages to Production | milestone | 0d | 2012-08-06 11:00 | 2012-08-06 11:00 | 31 | 3.62d | 0d |  |  | Hany Morcos |  |  |
| 33 | 4.3.4 | Enter page corrections and index |  | 5d | 2012-08-06 11:00 | 2012-08-13 11:00 | 32 | 3.62d | 0d |  |  | Jane Dow; Dan Jump [50%] | 60h | 4,040 |
| 34 | 4.3.5 | Cover design |  | 5d | 2012-08-13 11:00 | 2012-08-20 11:00 | 33 | 3.62d | 0d |  |  | Luis Sousa | 40h | 2,800 |
| 35 | 4.4 | **2nd Pages review** |  | 13d | 2012-08-20 11:00 | 2012-09-06 11:00 |  | 1.62d |  |  |  |  | 120h | 6,345 |
| 36 | 4.4.1 | Proof and review |  | 5d | 2012-08-20 11:00 | 2012-08-27 11:00 | 34 | 3.62d | 0d |  |  | Hany Morcos | 40h | 1,800 |
| 37 | 4.4.2 | Send proofed pages to Production | milestone | 0d | 2012-08-27 11:00 | 2012-08-27 11:00 | 36 | 3.62d | 0d |  |  | Hany Morcos |  |  |
| 38 | 4.4.3 | Final review |  | 5d | 2012-08-30 11:00 | 2012-09-06 11:00 | 37 | 1.62d |  |  |  | Jane Dow; Hany Morcos [50%]; Carole Poland [50%]; Bound galley proof [20 copy] | 80h | 4,545 |
| 39 | 4.5 | **Design book's companion website** |  | 10d | 2012-08-20 11:00 | 2012-09-03 11:00 | 29 | 4.62d | 0d |  |  |  | 88h | 5,834 |
| 40 | 4.5.1 | Create mockup |  | 6d | 2012-08-20 11:00 | 2012-08-30 11:00 |  | 4.62d | 0d |  |  | Luis Sousa; Hany Morcos | 48h | 2,610 |
| 41 | 4.5.2 | Review with author |  | 2d | 2012-08-30 11:00 | 2012-09-03 11:00 | 40 | 4.62d |  |  |  | Luis Sousa; Tad Orman; Dan Jump [50%]; Travel [0.1%] | 40h | 3,224 |
| 42 | 5 | **Color prep and printing** |  | 44d | 2012-09-10 08:00 | 2012-11-08 17:00 | 39 | 0d |  |  |  |  | 328h | 810 |
| 43 | 5.1 | Send to color house |  | 1d | 2012-09-10 08:00 | 2012-09-10 17:00 | 35 | 0d |  |  | Monday-Wednesday | Hany Morcos | 8h | 310 |
| 44 | 5.2 | Generate proofs |  | 10d | 2012-09-11 08:00 | 2012-09-24 17:00 | 43 | 0d |  |  |  | Color Setting Services | 80h | 500 |
| 45 | 5.3 | Print and ship |  | 30d | 2012-09-28 08:00 | 2012-11-08 17:00 | 44FS+3d | 0d |  |  |  | Printing Service | 240h |  |
| 46 | 6 | **Book launch prep** |  | 20d | 2012-09-03 11:00 | 2012-10-01 11:00 |  | 28.62d |  |  |  |  | 196h | 9,410 |
| 47 | 6.1 | Launch planning |  | 8d | 2012-09-03 11:00 | 2012-09-13 11:00 | 39 | 28.62d | 0d |  |  | Carole Poland [50%]; Jane Dow | 60h | 3,580 |
| 48 | 6.2 | Assign launch team members |  | 1d | 2012-09-13 11:00 | 2012-09-14 11:00 | 47 | 28.62d | 0d |  |  | Carole Poland | 8h | 420 |
| 49 | 6.3 | Complete author questionnaire |  | 5d | 2012-09-14 11:00 | 2012-09-21 11:00 | 48 | 28.62d | 0d |  |  | Hany Morcos; Tad Orman; Travel [0.1%] | 80h | 3,550 |
| 50 | 6.4 | Schedule author interviews |  | 1d | 2012-09-21 11:00 | 2012-09-24 11:00 | 49 | 28.62d | 0d |  |  | Hany Morcos | 8h | 310 |
| 51 | 6.5 | Design and order marketing material |  | 5d | 2012-09-24 11:00 | 2012-10-01 11:00 | 50 | 28.62d |  |  |  | Hany Morcos | 40h | 1,550 |
