# Children's book schedule

Schedule from MS Project, 2012-04-02 to 2012-11-16, costs in $.
Lucerne Publishing

## Calendars

- Standard: Mon-Fri 08:00-12:00, 13:00-17:00; Sat-Sun off. Exceptions (off unless hours are given): 2012-07-04 (Independence Day Holiday).
- Monday-Wednesday: Mon-Wed 08:00-12:00, 13:00-17:00; Thu-Sun off.

## Resources

| Resource | Group | Unit | Rate |
| --- | --- | --- | --- |
| Carole Poland | Editorial |  | 52.5 |
| Copyeditors | Editorial |  | 45 |
| Dan Jump | Design |  | 75.5 |
| Hany Morcos | Editorial |  | 38.75 |
| Jane Dow | Editorial |  | 55 |
| Jun Cao | Editorial |  | 42 |
| Luis Sousa | Design |  | 70 |
| Printing Service | Production |  |  |
| Travel | Other |  |  |
| Tad Orman | Other |  |  |
| Color Setting Services | Production |  |  |
| Bound galley proof | Production | copy | 15 |

## Schedule

| ID | WBS | Task | Type | Duration | Start | Finish | Predecessors | Baseline start | Baseline finish | Baseline duration | Total slack | Constraint | Deadline | Resources | Work | Cost | Baseline cost | Text9 |
| --- | --- | --- | --- | --- | --- | --- | --- | --- | --- | --- | --- | --- | --- | --- | --- | --- | --- | --- |
| 1 | 1 | **Editorial staff meeting** |  | 60.12d | 2012-04-09 08:00 | 2012-07-02 09:00 |  | 2012-04-09 08:00 | 2012-07-02 09:00 | 60.12d | 98.38d |  |  |  | 45.5h | 2,223 | 1,732.25 |  |
| 2 | 1.1 | Editorial staff meeting 1 |  | 1h | 2012-04-09 08:00 | 2012-04-09 09:00 |  | 2012-04-09 08:00 | 2012-04-09 09:00 | 1h | 158d | start no earlier than 2012-04-09 08:00 |  | Carole Poland; Jun Cao; Hany Morcos; Dan Jump [50%] | 3.5h | 171 | 133.25 |  |
| 3 | 1.2 | Editorial staff meeting 2 |  | 1h | 2012-04-16 08:00 | 2012-04-16 09:00 |  | 2012-04-16 08:00 | 2012-04-16 09:00 | 1h | 153d | start no earlier than 2012-04-16 08:00 |  | Carole Poland; Jun Cao; Hany Morcos; Dan Jump [50%] | 3.5h | 171 | 133.25 |  |
| 4 | 1.3 | Editorial staff meeting 3 |  | 1h | 2012-04-23 08:00 | 2012-04-23 09:00 |  | 2012-04-23 08:00 | 2012-04-23 09:00 | 1h | 148d | start no earlier than 2012-04-23 08:00 |  | Carole Poland; Jun Cao; Hany Morcos; Dan Jump [50%] | 3.5h | 171 | 133.25 |  |
| 5 | 1.4 | Editorial staff meeting 4 |  | 1h | 2012-04-30 08:00 | 2012-04-30 09:00 |  | 2012-04-30 08:00 | 2012-04-30 09:00 | 1h | 143d | start no earlier than 2012-04-30 08:00 |  | Carole Poland; Jun Cao; Hany Morcos; Dan Jump [50%] | 3.5h | 171 | 133.25 |  |
| 6 | 1.5 | Editorial staff meeting 5 |  | 1h | 2012-05-07 08:00 | 2012-05-07 09:00 |  | 2012-05-07 08:00 | 2012-05-07 09:00 | 1h | 138d | start no earlier than 2012-05-07 08:00 |  | Carole Poland; Jun Cao; Hany Morcos; Dan Jump [50%] | 3.5h | 171 | 133.25 |  |
| 7 | 1.6 | Editorial staff meeting 6 |  | 1h | 2012-05-14 08:00 | 2012-05-14 09:00 |  | 2012-05-14 08:00 | 2012-05-14 09:00 | 1h | 133d | start no earlier than 2012-05-14 08:00 |  | Carole Poland; Jun Cao; Hany Morcos; Dan Jump [50%] | 3.5h | 171 | 133.25 |  |
| 8 | 1.7 | Editorial staff meeting 7 |  | 1h | 2012-05-21 08:00 | 2012-05-21 09:00 |  | 2012-05-21 08:00 | 2012-05-21 09:00 | 1h | 128d | start no earlier than 2012-05-21 08:00 |  | Carole Poland; Jun Cao; Hany Morcos; Dan Jump [50%] | 3.5h | 171 | 133.25 |  |
| 9 | 1.8 | Editorial staff meeting 8 |  | 1h | 2012-05-28 08:00 | 2012-05-28 09:00 |  | 2012-05-28 08:00 | 2012-05-28 09:00 | 1h | 123d | start no earlier than 2012-05-28 08:00 |  | Carole Poland; Jun Cao; Hany Morcos; Dan Jump [50%] | 3.5h | 171 | 133.25 |  |
| 10 | 1.9 | Editorial staff meeting 9 |  | 1h | 2012-06-04 08:00 | 2012-06-04 09:00 |  | 2012-06-04 08:00 | 2012-06-04 09:00 | 1h | 118d | start no earlier than 2012-06-04 08:00 |  | Carole Poland; Jun Cao; Hany Morcos; Dan Jump [50%] | 3.5h | 171 | 133.25 |  |
| 11 | 1.10 | Editorial staff meeting 10 |  | 1h | 2012-06-11 08:00 | 2012-06-11 09:00 |  | 2012-06-11 08:00 | 2012-06-11 09:00 | 1h | 113d | start no earlier than 2012-06-11 08:00 |  | Carole Poland; Jun Cao; Hany Morcos; Dan Jump [50%] | 3.5h | 171 | 133.25 |  |
| 12 | 1.11 | Editorial staff meeting 11 |  | 1h | 2012-06-18 08:00 | 2012-06-18 09:00 |  | 2012-06-18 08:00 | 2012-06-18 09:00 | 1h | 108d | start no earlier than 2012-06-18 08:00 |  | Carole Poland; Jun Cao; Hany Morcos; Dan Jump [50%] | 3.5h | 171 | 133.25 |  |
| 13 | 1.12 | Editorial staff meeting 12 |  | 1h | 2012-06-25 08:00 | 2012-06-25 09:00 |  | 2012-06-25 08:00 | 2012-06-25 09:00 | 1h | 103d | start no earlier than 2012-06-25 08:00 |  | Carole Poland; Jun Cao; Hany Morcos; Dan Jump [50%] | 3.5h | 171 | 133.25 |  |
| 14 | 1.13 | Editorial staff meeting 13 |  | 1h | 2012-07-02 08:00 | 2012-07-02 09:00 |  | 2012-07-02 08:00 | 2012-07-02 09:00 | 1h | 98d | start no earlier than 2012-07-02 08:00 |  | Carole Poland; Jun Cao; Hany Morcos; Dan Jump [50%] | 3.5h | 171 | 133.25 |  |
| 15 | 2 | **Acquisition** |  | 35.5d | 2012-04-02 08:00 | 2012-05-21 12:00 |  | 2012-04-02 08:00 | 2012-05-11 17:00 | 30d | 0d |  |  |  | 440h | 17,400 | 9,900 |  |
| 16 | 2.1 | Manuscript received | milestone | 0d | 2012-04-02 08:00 | 2012-04-02 08:00 |  | 2012-04-02 08:00 | 2012-04-02 08:00 | 0d | 0d |  |  |  |  |  |  |  |
| 17 | 2.2 | Content edit |  | 15d | 2012-04-02 08:00 | 2012-04-26 10:00 | 16 | 2012-04-02 08:00 | 2012-04-25 17:00 | 15d | 0d |  |  | Carole Poland | 120h | 6,300 | 6,300 | Full developmental edit |
| 18 | 2.3 | Original art review |  | 10.25d | 2012-04-19 10:00 | 2012-05-03 12:00 | 17FS-5d |  |  |  | 0d |  |  | Hany Morcos; Jane Dow | 160h | 7,500 |  |  |
| 19 | 2.4 | Author review of content edit |  | 12d | 2012-05-03 13:00 | 2012-05-21 12:00 | 17, 18 | 2012-04-26 08:00 | 2012-05-11 17:00 | 12d | 0d |  |  | Tad Orman; Copyeditors | 160h | 3,600 | 3,600 | Incorp must-fix issues |
| 20 | 2.5 | Handoff to Editorial | milestone | 0d | 2012-05-21 12:00 | 2012-05-21 12:00 | 19 | 2012-05-11 17:00 | 2012-05-11 17:00 | 0d | 0d |  | 2012-05-25 17:00 | Carole Poland |  |  |  |  |
| 21 | 3 | **Editorial** |  | 28.88d | 2012-05-21 13:00 | 2012-06-29 11:00 | 15 | 2012-05-14 08:00 | 2012-06-21 15:00 | 28.75d | 0d |  |  |  | 400h | 15,670 | 12,650 |  |
| 22 | 3.1 | Organize manuscript for copyedit |  | 5d | 2012-05-21 13:00 | 2012-05-28 12:00 |  | 2012-05-14 08:00 | 2012-05-18 17:00 | 5d | 0d |  |  | Hany Morcos; Dan Jump [50%] | 60h | 3,060 | 1,550 | Address outstanding line edit issues |
| 23 | 3.2 | Copyedit |  | 11.25d | 2012-05-28 13:00 | 2012-06-12 15:00 | 22 | 2012-05-21 08:00 | 2012-06-05 10:00 | 11.25d | 0d |  |  | Copyeditors [200%] | 180h | 8,100 | 8,100 | Style Guide compliance |
| 24 | 3.3 | Author review of copyedit |  | 10d | 2012-06-12 15:00 | 2012-06-26 15:00 | 23 | 2012-06-05 10:00 | 2012-06-19 10:00 | 10d | 0d |  |  | Tad Orman; Copyeditors [25%] | 100h | 900 | 900 | Incorp must-fix issues |
| 25 | 3.4 | Copyedit incorp |  | 5d | 2012-06-22 10:00 | 2012-06-29 11:00 | 24FS-2.5% | 2012-06-14 15:00 | 2012-06-21 15:00 | 5d | 0d |  |  | Carole Poland; Dan Jump [50%] | 60h | 3,610 | 2,100 | Incorp must-fix issues |
| 26 | 3.5 | Handoff to Production | milestone | 0d | 2012-06-29 11:00 | 2012-06-29 11:00 | 25 | 2012-06-21 15:00 | 2012-06-21 15:00 | 0d | 0d |  |  | Hany Morcos |  |  |  |  |

| ID | WBS | Task | Type | Duration | Start | Finish | Predecessors | Baseline start | Baseline finish | Baseline duration | Total slack | Free slack | Constraint | Deadline | Calendar | Resources | Work | Cost | Baseline cost |
| --- | --- | --- | --- | --- | --- | --- | --- | --- | --- | --- | --- | --- | --- | --- | --- | --- | --- | --- | --- |
| 27 | 4 | **Design and Production** |  | 55.12d | 2012-06-29 11:00 | 2012-09-17 12:00 | 21 | 2012-06-21 15:00 | 2012-08-31 15:00 | 50d | 0d |  |  |  |  |  | 888h | 46,679 | 38,495 |
| 28 | 4.1 | Set pages |  | 15d | 2012-06-29 11:00 | 2012-07-23 11:00 |  | 2012-06-21 15:00 | 2012-07-13 15:00 | 15d | 0d |  |  |  |  | Jane Dow | 120h | 7,590 | 7,590 |
| 29 | 4.2 | Interior illustration design |  | 15.12d | 2012-06-29 11:00 | 2012-07-23 12:00 | 28SS | 2012-06-21 15:00 | 2012-07-13 15:00 | 15d | 0d |  |  |  |  | Luis Sousa; Hany Morcos | 240h | 13,050 | 13,050 |
| 30 | 4.3 | **1st Pages review** |  | 30d | 2012-07-23 13:00 | 2012-09-03 12:00 | 29 | 2012-07-13 15:00 | 2012-08-17 15:00 | 25d | 0d |  |  |  |  |  | 320h | 13,860 | 7,780 |
| 31 | 4.3.1 | Proofread and index |  | 10d | 2012-07-23 13:00 | 2012-08-06 12:00 |  | 2012-07-13 15:00 | 2012-07-27 15:00 | 10d | 0d |  | start no earlier than 2012-07-13 08:00 |  |  | Tad Orman; Copyeditors | 100h | 900 | 900 |
| 32 | 4.3.2 | Incorporate 1st Pages review |  | 10d | 2012-08-06 13:00 | 2012-08-20 12:00 | 31 | 2012-07-27 15:00 | 2012-08-03 15:00 | 5d | 0d |  |  |  |  | Hany Morcos; Dan Jump [50%] | 120h | 6,120 | 1,550 |
| 33 | 4.3.3 | Send proofed pages to Production | milestone | 0d | 2012-08-20 12:00 | 2012-08-20 12:00 | 32 | 2012-08-03 15:00 | 2012-08-03 15:00 | 0d | 0d |  |  |  |  | Hany Morcos |  |  |  |
| 34 | 4.3.4 | Enter page corrections and index |  | 5d | 2012-08-20 13:00 | 2012-08-27 12:00 | 33 | 2012-08-03 15:00 | 2012-08-10 15:00 | 5d | 0d |  |  |  |  | Jane Dow; Dan Jump [50%] | 60h | 4,040 | 2,530 |
| 35 | 4.3.5 | Cover design |  | 5d | 2012-08-27 13:00 | 2012-09-03 12:00 | 34 | 2012-08-10 15:00 | 2012-08-17 15:00 | 5d | 0d |  |  |  |  | Luis Sousa | 40h | 2,800 | 2,800 |
| 36 | 4.4 | **2nd Pages review** |  | 10d | 2012-09-03 13:00 | 2012-09-17 12:00 |  | 2012-08-17 15:00 | 2012-08-31 15:00 | 10d | 0d |  |  |  |  |  | 120h | 6,345 | 6,345 |
| 37 | 4.4.1 | Proof and review |  | 5d | 2012-09-03 13:00 | 2012-09-10 12:00 | 35 | 2012-08-17 15:00 | 2012-08-24 15:00 | 5d | 0d |  |  |  |  | Hany Morcos | 40h | 1,800 | 1,800 |
| 38 | 4.4.2 | Send proofed pages to Production | milestone | 0d | 2012-09-10 12:00 | 2012-09-10 12:00 | 37 | 2012-08-24 15:00 | 2012-08-24 15:00 | 0d | 0d |  |  |  |  | Hany Morcos |  |  |  |
| 39 | 4.4.3 | Final review |  | 5d | 2012-09-10 13:00 | 2012-09-17 12:00 | 38 | 2012-08-24 15:00 | 2012-08-31 15:00 | 5d | 0d |  |  |  |  | Jane Dow; Hany Morcos [50%]; Carole Poland [50%]; Bound galley proof [20 copy] | 80h | 4,545 | 4,545 |
| 40 | 4.5 | **Design book's companion website** |  | 5d | 2012-09-03 13:00 | 2012-09-10 12:00 | 30 | 2012-08-17 15:00 | 2012-08-24 15:00 | 5d | 5d |  |  |  |  |  | 88h | 5,834 | 3,730 |
| 41 | 4.5.1 | Create mockup |  | 3d | 2012-09-03 13:00 | 2012-09-06 12:00 |  | 2012-08-17 15:00 | 2012-08-22 15:00 | 3d | 5d | 0d |  |  |  | Luis Sousa; Hany Morcos | 48h | 2,610 | 2,610 |
| 42 | 4.5.2 | Review with author |  | 2d | 2012-09-06 13:00 | 2012-09-10 12:00 | 41 | 2012-08-22 15:00 | 2012-08-24 15:00 | 2d | 5d |  |  |  |  | Luis Sousa; Tad Orman; Dan Jump [50%]; Travel [0.1%] | 40h | 3,224 | 1,120 |
| 43 | 5 | **Color prep and printing** |  | 44d | 2012-09-17 13:00 | 2012-11-16 12:00 | 40 | 2012-09-03 08:00 | 2012-11-01 17:00 | 44d | 0d |  |  |  |  |  | 328h | 810 | 810 |
| 44 | 5.1 | Send to color house |  | 1d | 2012-09-17 13:00 | 2012-09-18 12:00 | 36 | 2012-09-03 08:00 | 2012-09-03 17:00 | 1d | 0d |  |  |  | Monday-Wednesday | Hany Morcos | 8h | 310 | 310 |
| 45 | 5.2 | Generate proofs |  | 10d | 2012-09-18 13:00 | 2012-10-02 12:00 | 44 | 2012-09-04 08:00 | 2012-09-17 17:00 | 10d | 0d |  |  | 2012-10-05 17:00 |  | Color Setting Services | 80h | 500 | 500 |
| 46 | 5.3 | Print and ship |  | 30d | 2012-10-05 13:00 | 2012-11-16 12:00 | 45FS+3d | 2012-09-21 08:00 | 2012-11-01 17:00 | 30d | 0d |  |  |  |  | Printing Service | 240h |  |  |
| 47 | 6 | **Book launch prep** |  | 22d | 2012-09-18 13:00 | 2012-10-18 12:00 |  | 2012-09-04 08:00 | 2012-09-26 17:00 | 17d | 21d |  |  |  |  |  | 236h | 10,960 | 7,410 |
| 48 | 6.1 | Launch planning |  | 5d | 2012-09-18 13:00 | 2012-09-25 12:00 | 44 | 2012-09-04 08:00 | 2012-09-10 17:00 | 5d | 21d | 0d |  |  |  | Carole Poland [50%]; Jane Dow | 60h | 3,580 | 3,580 |
| 49 | 6.2 | Assign launch team members |  | 1d | 2012-09-25 13:00 | 2012-09-26 12:00 | 48 | 2012-09-11 08:00 | 2012-09-11 17:00 | 1d | 21d | 0d |  |  |  | Carole Poland | 8h | 420 | 420 |
| 50 | 6.3 | Complete author questionnaire |  | 5d | 2012-09-26 13:00 | 2012-10-03 12:00 | 49 | 2012-09-12 08:00 | 2012-09-18 17:00 | 5d | 21d | 0d |  |  |  | Hany Morcos; Tad Orman; Travel [0.1%] | 80h | 3,550 | 1,550 |
| 51 | 6.4 | Schedule author interviews |  | 1d | 2012-10-03 13:00 | 2012-10-04 12:00 | 50 | 2012-09-19 08:00 | 2012-09-19 17:00 | 1d | 21d | 0d |  |  |  | Hany Morcos | 8h | 310 | 310 |
| 52 | 6.5 | Design and order marketing material |  | 10d | 2012-10-04 13:00 | 2012-10-18 12:00 | 51 | 2012-09-20 08:00 | 2012-09-26 17:00 | 5d | 21d |  |  |  |  | Hany Morcos | 80h | 3,100 | 1,550 |
