# Children's Book Schedule

Schedule from MS Project, 2012-04-02 to 2012-12-07, costs in $, A marks actual dates.
Lucerne Publishing

## Calendars

- Standard: Mon-Fri 08:00-12:00, 13:00-17:00; Sat-Sun off. Exceptions (off unless hours are given): 2012-07-04 (Independence Day Holiday).
- Monday-Wednesday: Mon-Wed 08:00-12:00, 13:00-17:00; Thu-Sun off.

## Resources

| Resource | Group | Unit | Rate |
| --- | --- | --- | --- |
| Carole Poland | Editorial |  | 52.5 |
| Copyeditors | Editorial |  | 45 |
| Dan Jump | Design |  | 75.5 |
| Hany Morcos | Editorial |  | 38.75 |
| Jane Dow | Editorial |  | 55 |
| Jun Cao | Editorial |  | 22 |
| Luis Sousa | Design |  | 70 |
| Printing Service | Production |  |  |
| Travel | Other |  |  |
| Tad Orman | Other |  |  |
| Color Setting Services | Production |  |  |
| Bound galley proof | Production | copy | 15 |

## Schedule

| ID | WBS | Task | Type | Duration | Start | Finish | Predecessors | Complete | Baseline start | Baseline finish | Baseline duration | Constraint | Deadline | Resources | Work | Actual work | Cost | Baseline cost | Actual cost | Text9 |
| --- | --- | --- | --- | --- | --- | --- | --- | --- | --- | --- | --- | --- | --- | --- | --- | --- | --- | --- | --- | --- |
| 1 | 1 | **Editorial staff meeting** |  | 60.12d | 2012-04-09 08:00 A | 2012-07-02 09:00 A |  | 100% | 2012-04-09 08:00 | 2012-07-02 09:00 | 60.12d |  |  |  | 45.5h | 45.5h | 1,963 | 2,223 | 1,963 |  |
| 2 | 1.1 | Editorial staff meeting 1 |  | 1h | 2012-04-09 08:00 A | 2012-04-09 09:00 A |  | 100% | 2012-04-09 08:00 | 2012-04-09 09:00 | 1h | start no earlier than 2012-04-09 08:00 |  | Carole Poland; Jun Cao; Hany Morcos; Dan Jump [50%] | 3.5h | 3.5h | 151 | 171 | 151 |  |
| 3 | 1.2 | Editorial staff meeting 2 |  | 1h | 2012-04-16 08:00 A | 2012-04-16 09:00 A |  | 100% | 2012-04-16 08:00 | 2012-04-16 09:00 | 1h | start no earlier than 2012-04-16 08:00 |  | Carole Poland; Jun Cao; Hany Morcos; Dan Jump [50%] | 3.5h | 3.5h | 151 | 171 | 151 |  |
| 4 | 1.3 | Editorial staff meeting 3 |  | 1h | 2012-04-23 08:00 A | 2012-04-23 09:00 A |  | 100% | 2012-04-23 08:00 | 2012-04-23 09:00 | 1h | start no earlier than 2012-04-23 08:00 |  | Carole Poland; Jun Cao; Hany Morcos; Dan Jump [50%] | 3.5h | 3.5h | 151 | 171 | 151 |  |
| 5 | 1.4 | Editorial staff meeting 4 |  | 1h | 2012-04-30 08:00 A | 2012-04-30 09:00 A |  | 100% | 2012-04-30 08:00 | 2012-04-30 09:00 | 1h | start no earlier than 2012-04-30 08:00 |  | Carole Poland; Jun Cao; Hany Morcos; Dan Jump [50%] | 3.5h | 3.5h | 151 | 171 | 151 |  |
| 6 | 1.5 | Editorial staff meeting 5 |  | 1h | 2012-05-07 08:00 A | 2012-05-07 09:00 A |  | 100% | 2012-05-07 08:00 | 2012-05-07 09:00 | 1h | start no earlier than 2012-05-07 08:00 |  | Carole Poland; Jun Cao; Hany Morcos; Dan Jump [50%] | 3.5h | 3.5h | 151 | 171 | 151 |  |
| 7 | 1.6 | Editorial staff meeting 6 |  | 1h | 2012-05-14 08:00 A | 2012-05-14 09:00 A |  | 100% | 2012-05-14 08:00 | 2012-05-14 09:00 | 1h | start no earlier than 2012-05-14 08:00 |  | Carole Poland; Jun Cao; Hany Morcos; Dan Jump [50%] | 3.5h | 3.5h | 151 | 171 | 151 |  |
| 8 | 1.7 | Editorial staff meeting 7 |  | 1h | 2012-05-21 08:00 A | 2012-05-21 09:00 A |  | 100% | 2012-05-21 08:00 | 2012-05-21 09:00 | 1h | start no earlier than 2012-05-21 08:00 |  | Carole Poland; Jun Cao; Hany Morcos; Dan Jump [50%] | 3.5h | 3.5h | 151 | 171 | 151 |  |
| 9 | 1.8 | Editorial staff meeting 8 |  | 1h | 2012-05-28 08:00 A | 2012-05-28 09:00 A |  | 100% | 2012-05-28 08:00 | 2012-05-28 09:00 | 1h | start no earlier than 2012-05-28 08:00 |  | Carole Poland; Jun Cao; Hany Morcos; Dan Jump [50%] | 3.5h | 3.5h | 151 | 171 | 151 |  |
| 10 | 1.9 | Editorial staff meeting 9 |  | 1h | 2012-06-04 08:00 A | 2012-06-04 09:00 A |  | 100% | 2012-06-04 08:00 | 2012-06-04 09:00 | 1h | start no earlier than 2012-06-04 08:00 |  | Carole Poland; Jun Cao; Hany Morcos; Dan Jump [50%] | 3.5h | 3.5h | 151 | 171 | 151 |  |
| 11 | 1.10 | Editorial staff meeting 10 |  | 1h | 2012-06-11 08:00 A | 2012-06-11 09:00 A |  | 100% | 2012-06-11 08:00 | 2012-06-11 09:00 | 1h | start no earlier than 2012-06-11 08:00 |  | Carole Poland; Jun Cao; Hany Morcos; Dan Jump [50%] | 3.5h | 3.5h | 151 | 171 | 151 |  |
| 12 | 1.11 | Editorial staff meeting 11 |  | 1h | 2012-06-18 08:00 A | 2012-06-18 09:00 A |  | 100% | 2012-06-18 08:00 | 2012-06-18 09:00 | 1h | start no earlier than 2012-06-18 08:00 |  | Carole Poland; Jun Cao; Hany Morcos; Dan Jump [50%] | 3.5h | 3.5h | 151 | 171 | 151 |  |
| 13 | 1.12 | Editorial staff meeting 12 |  | 1h | 2012-06-25 08:00 A | 2012-06-25 09:00 A |  | 100% | 2012-06-25 08:00 | 2012-06-25 09:00 | 1h | start no earlier than 2012-06-25 08:00 |  | Carole Poland; Jun Cao; Hany Morcos; Dan Jump [50%] | 3.5h | 3.5h | 151 | 171 | 151 |  |
| 14 | 1.13 | Editorial staff meeting 13 |  | 1h | 2012-07-02 08:00 A | 2012-07-02 09:00 A |  | 100% | 2012-07-02 08:00 | 2012-07-02 09:00 | 1h | start no earlier than 2012-07-02 08:00 |  | Carole Poland; Jun Cao; Hany Morcos; Dan Jump [50%] | 3.5h | 3.5h | 151 | 171 | 151 |  |
| 15 | 2 | **Acquisition** |  | 37d | 2012-04-02 08:00 A | 2012-05-22 17:00 A |  | 100% | 2012-04-02 08:00 | 2012-05-21 12:00 | 35.5d |  |  |  | 464h | 464h | 17,940 | 17,400 | 17,940 |  |
| 16 | 2.1 | Manuscript received | milestone | 0d | 2012-04-02 08:00 A | 2012-04-02 08:00 A |  | 100% | 2012-04-02 08:00 | 2012-04-02 08:00 | 0d |  |  |  |  |  |  |  |  |  |
| 17 | 2.2 | Content edit |  | 15d | 2012-04-02 08:00 A | 2012-04-26 10:00 A | 16 | 100% | 2012-04-02 08:00 | 2012-04-26 10:00 | 15d |  |  | Carole Poland | 120h | 120h | 6,300 | 6,300 | 6,300 | Full developmental edit |
| 18 | 2.3 | Original art review |  | 10.25d | 2012-04-19 10:00 A | 2012-05-03 12:00 A | 17FS-5d | 100% | 2012-04-19 10:00 | 2012-05-03 12:00 | 10.25d |  |  | Hany Morcos; Jane Dow | 160h | 160h | 7,500 | 7,500 | 7,500 |  |
| 19 | 2.4 | Author review of content edit |  | 13.5d | 2012-05-03 13:00 A | 2012-05-22 17:00 A | 17, 18 | 100% | 2012-05-03 13:00 | 2012-05-21 12:00 | 12d |  |  | Tad Orman; Copyeditors | 184h | 184h | 4,140 | 3,600 | 4,140 | Incorp must-fix issues |
| 20 | 2.5 | Handoff to Editorial | milestone | 0d | 2012-05-22 17:00 A | 2012-05-22 17:00 A | 19 | 100% | 2012-05-21 12:00 | 2012-05-21 12:00 | 0d |  | 2012-05-25 17:00 | Carole Poland |  |  |  |  |  |  |
| 21 | 3 | **Editorial** |  | 29.77d | 2012-05-23 08:00 A | 2012-07-03 15:12 A | 15 | 100% | 2012-05-21 13:00 | 2012-06-29 11:00 | 28.88d |  |  |  | 468.4h | 468.4h | 17,949 | 15,670 | 17,949 |  |
| 22 | 3.1 | Organize manuscript for copyedit |  | 5d | 2012-05-23 08:00 A | 2012-05-29 17:00 A |  | 100% | 2012-05-21 13:00 | 2012-05-28 12:00 | 5d |  |  | Hany Morcos; Dan Jump [50%] | 67h | 67h | 3,368 | 3,060 | 3,368 | Address outstanding line edit issues |
| 23 | 3.2 | Copyedit |  | 10.5d | 2012-05-30 08:00 A | 2012-06-13 12:00 A | 22 | 100% | 2012-05-28 13:00 | 2012-06-12 15:00 | 11.25d |  |  | Copyeditors [200%] | 211.4h | 211.4h | 9,513 | 8,100 | 9,513 | Style Guide compliance |
| 24 | 3.3 | Author review of copyedit |  | 12.2d | 2012-06-13 13:00 A | 2012-06-29 14:36 A | 23 | 100% | 2012-06-12 15:00 | 2012-06-26 15:00 | 10d |  |  | Tad Orman; Copyeditors [25%] | 130h | 130h | 1,458 | 900 | 1,458 | Incorp must-fix issues |
| 25 | 3.4 | Copyedit incorp |  | 5d | 2012-06-26 14:12 A | 2012-07-03 15:12 A | 24FS-2.5% | 100% | 2012-06-22 10:00 | 2012-06-29 11:00 | 5d |  |  | Carole Poland; Dan Jump [50%] | 60h | 60h | 3,610 | 3,610 | 3,610 | Incorp must-fix issues |
| 26 | 3.5 | Handoff to Production | milestone | 0d | 2012-07-03 15:12 A | 2012-07-03 15:12 A | 25 | 100% | 2012-06-29 11:00 | 2012-06-29 11:00 | 0d |  |  | Hany Morcos |  |  |  |  |  |  |

| ID | WBS | Task | Type | Duration | Start | Finish | Predecessors | Complete | Remaining | Baseline start | Baseline finish | Baseline duration | Total slack | Free slack | Constraint | Deadline | Calendar | Resources | Work | Actual work | Cost | Baseline cost | Actual cost |
| --- | --- | --- | --- | --- | --- | --- | --- | --- | --- | --- | --- | --- | --- | --- | --- | --- | --- | --- | --- | --- | --- | --- | --- |
| 27 | 4 | **Design and Production** |  | 68.22d | 2012-07-03 15:12 A | 2012-10-08 17:00 | 21 | 43% | 38.87d | 2012-06-29 11:00 | 2012-09-17 12:00 | 55.12d | -11d | 0d |  |  |  |  | 979h | 419h | 48,840.25 | 40,845 | 23,051.25 |
| 28 | 4.1 | Set pages |  | 15d | 2012-07-03 15:12 A | 2012-07-25 15:12 A |  | 100% |  | 2012-06-29 11:00 | 2012-07-23 11:00 | 15d |  |  |  |  |  | Jane Dow | 120h | 120h | 7,590 | 7,590 | 7,590 |
| 29 | 4.2 | Interior illustration design |  | 22d | 2012-07-09 08:00 A | 2012-08-07 17:00 A | 28SS | 100% |  | 2012-06-29 11:00 | 2012-07-23 12:00 | 15.12d |  |  |  |  |  | Luis Sousa; Hany Morcos | 299h | 299h | 15,461.25 | 13,050 | 15,461.25 |
| 30 | 4.3 | **1st Pages review** |  | 34d | 2012-08-08 08:00 | 2012-09-24 17:00 | 29 |  |  | 2012-07-23 13:00 | 2012-09-03 12:00 | 30d | -11d | 0d |  |  |  |  | 352h |  | 13,860 | 13,860 |  |
| 31 | 4.3.1 | Proofread and index |  | 14d | 2012-08-08 08:00 | 2012-08-27 17:00 |  |  |  | 2012-07-23 13:00 | 2012-08-06 12:00 | 10d | -11d | 0d | start no earlier than 2012-07-13 08:00 |  |  | Tad Orman; Copyeditors | 132h |  | 900 | 900 |  |
| 32 | 4.3.2 | Incorporate 1st Pages review |  | 10d | 2012-08-28 08:00 | 2012-09-10 17:00 | 31 |  |  | 2012-08-06 13:00 | 2012-08-20 12:00 | 10d | -11d | 0d |  |  |  | Hany Morcos; Dan Jump [50%] | 120h |  | 6,120 | 6,120 |  |
| 33 | 4.3.3 | Send proofed pages to Production | milestone | 0d | 2012-09-10 17:00 | 2012-09-10 17:00 | 32 |  |  | 2012-08-20 12:00 | 2012-08-20 12:00 | 0d | -11d | 0d |  |  |  | Hany Morcos |  |  |  |  |  |
| 34 | 4.3.4 | Enter page corrections and index |  | 5d | 2012-09-11 08:00 | 2012-09-17 17:00 | 33 |  |  | 2012-08-20 13:00 | 2012-08-27 12:00 | 5d | -11d | 0d |  |  |  | Jane Dow; Dan Jump [50%] | 60h |  | 4,040 | 4,040 |  |
| 35 | 4.3.5 | Cover design |  | 5d | 2012-09-18 08:00 | 2012-09-24 17:00 | 34 |  |  | 2012-08-27 13:00 | 2012-09-03 12:00 | 5d | -11d | 0d |  |  |  | Luis Sousa | 40h |  | 2,800 | 2,800 |  |
| 36 | 4.4 | **2nd Pages review** |  | 10d | 2012-09-25 08:00 | 2012-10-08 17:00 |  |  |  | 2012-09-03 13:00 | 2012-09-17 12:00 | 10d | -11d | 0d |  |  |  |  | 120h |  | 6,095 | 6,345 |  |
| 37 | 4.4.1 | Proof and review |  | 5d | 2012-09-25 08:00 | 2012-10-01 17:00 | 35 |  |  | 2012-09-25 08:00 | 2012-10-01 17:00 | 5d | -11d | 0d |  |  |  | Hany Morcos | 40h |  | 1,550 | 1,550 |  |
| 38 | 4.4.2 | Send proofed pages to Production | milestone | 0d | 2012-10-01 17:00 | 2012-10-01 17:00 | 37 |  |  | 2012-09-10 12:00 | 2012-09-10 12:00 | 0d | -11d | 0d |  |  |  | Hany Morcos |  |  |  |  |  |
| 39 | 4.4.3 | Final review |  | 5d | 2012-10-02 08:00 | 2012-10-08 17:00 | 38 |  |  | 2012-09-10 13:00 | 2012-09-17 12:00 | 5d | -11d | 0d |  |  |  | Jane Dow; Hany Morcos [50%]; Carole Poland [50%]; Bound galley proof [20 copy] | 80h |  | 4,545 | 4,545 |  |
| 40 | 4.5 | **Design book's companion website** |  | 5d | 2012-09-25 08:00 | 2012-10-01 17:00 | 30 |  |  | 2012-09-25 08:00 | 2012-10-01 17:00 | 5d | -6d | 0d |  |  |  |  | 88h |  | 5,834 | 5,834 |  |
| 41 | 4.5.1 | Create mockup |  | 3d | 2012-09-25 08:00 | 2012-09-27 17:00 |  |  |  | 2012-09-25 08:00 | 2012-09-27 17:00 | 3d | -6d | 0d |  |  |  | Luis Sousa; Hany Morcos | 48h |  | 2,610 | 2,610 |  |
| 42 | 4.5.2 | Review with author |  | 2d | 2012-09-28 08:00 | 2012-10-01 17:00 | 41 |  |  | 2012-09-28 08:00 | 2012-10-01 17:00 | 2d | -6d | 0d |  |  |  | Luis Sousa; Tad Orman; Dan Jump [50%]; Travel [0.1%] | 40h |  | 3,224 | 3,224 |  |
| 43 | 5 | **Color prep and printing** |  | 44d | 2012-10-09 08:00 | 2012-12-07 17:00 | 40 |  |  | 2012-09-17 13:00 | 2012-11-16 12:00 | 44d | -11d | 0d |  |  |  |  | 328h |  | 810 | 810 |  |
| 44 | 5.1 | Send to color house |  | 1d | 2012-10-09 08:00 | 2012-10-09 17:00 | 36 |  |  | 2012-09-17 13:00 | 2012-09-18 12:00 | 1d | -7d | 0d |  |  | Monday-Wednesday | Hany Morcos | 8h |  | 310 | 310 |  |
| 45 | 5.2 | Generate proofs |  | 10d | 2012-10-10 08:00 | 2012-10-23 17:00 | 44 |  |  | 2012-09-18 13:00 | 2012-10-02 12:00 | 10d | -11d | 0d |  | 2012-10-08 17:00 |  | Color Setting Services | 80h |  | 500 | 500 |  |
| 46 | 5.3 | Print and ship |  | 30d | 2012-10-29 08:00 | 2012-12-07 17:00 | 45FS+3d |  |  | 2012-10-05 13:00 | 2012-11-16 12:00 | 30d | 0d |  |  |  |  | Printing Service | 240h |  |  |  |  |
| 47 | 6 | **Book launch prep** |  | 22d | 2012-10-10 08:00 | 2012-11-08 17:00 |  |  |  | 2012-09-18 13:00 | 2012-10-18 12:00 | 22d | 21d |  |  |  |  |  | 236h |  | 10,960 | 10,960 |  |
| 48 | 6.1 | Launch planning |  | 5d | 2012-10-10 08:00 | 2012-10-16 17:00 | 44 |  |  | 2012-09-18 13:00 | 2012-09-25 12:00 | 5d | 21d | 0d |  |  |  | Carole Poland [50%]; Jane Dow | 60h |  | 3,580 | 3,580 |  |
| 49 | 6.2 | Assign launch team members |  | 1d | 2012-10-17 08:00 | 2012-10-17 17:00 | 48 |  |  | 2012-09-25 13:00 | 2012-09-26 12:00 | 1d | 21d | 0d |  |  |  | Carole Poland | 8h |  | 420 | 420 |  |
| 50 | 6.3 | Complete author questionnaire |  | 5d | 2012-10-18 08:00 | 2012-10-24 17:00 | 49 |  |  | 2012-09-26 13:00 | 2012-10-03 12:00 | 5d | 21d | 0d |  |  |  | Hany Morcos; Tad Orman; Travel [0.1%] | 80h |  | 3,550 | 3,550 |  |
| 51 | 6.4 | Schedule author interviews |  | 1d | 2012-10-25 08:00 | 2012-10-25 17:00 | 50 |  |  | 2012-10-03 13:00 | 2012-10-04 12:00 | 1d | 21d | 0d |  |  |  | Hany Morcos | 8h |  | 310 | 310 |  |
| 52 | 6.5 | Design and order marketing material |  | 10d | 2012-10-26 08:00 | 2012-11-08 17:00 | 51 |  |  | 2012-10-04 13:00 | 2012-10-18 12:00 | 10d | 21d |  |  |  |  | Hany Morcos | 80h |  | 3,100 | 3,100 |  |
