# Children's Gourmet Cookbook

Schedule from MS Project, 2012-07-11 to 2012-10-31, costs in $, A marks actual dates.
Lucerne Publishing

## Calendars

- Standard: Mon-Fri 08:00-12:00, 13:00-17:00; Sat-Sun off.

## Resources

| Resource | Rate |
| --- | --- |
| John Evans | 62 |
| Katie Jordan | 48 |
| Robin Wood | 44 |
| William Flash | 55 |
| Carole Poland | 52.5 |
| Printing Service |  |
| Color Setting Services |  |
| Copyeditors |  |

## Schedule

| ID | WBS | Task | Type | Duration | Start | Finish | Predecessors | Complete | Baseline start | Baseline finish | Baseline duration | Total slack | Free slack | Resources | Work | Actual work | Cost | Baseline cost | Actual cost |
| --- | --- | --- | --- | --- | --- | --- | --- | --- | --- | --- | --- | --- | --- | --- | --- | --- | --- | --- | --- |
| 1 | 1 | **Acquisition** |  | 31d | 2012-07-11 A | 2012-08-22 A |  | 100% | 2012-07-09 | 2012-08-10 | 25d |  |  |  | 232h | 232h | 12,180 | 10,500 | 12,180 |
| 2 | 1.1 | Manuscript received | milestone | 0d | 2012-07-11 A | 2012-07-11 A |  | 100% | 2012-07-09 | 2012-07-09 | 0d |  |  | Carole Poland |  |  |  |  |  |
| 3 | 1.2 | Content edit |  | 29d | 2012-07-11 A | 2012-08-22 A | 2 | 100% | 2012-07-09 | 2012-08-10 | 25d |  |  | Carole Poland | 232h | 232h | 12,180 | 10,500 | 12,180 |
| 4 | 1.3 | Handoff to Editorial | milestone | 0d | 2012-08-22 A | 2012-08-22 A | 3 | 100% | 2012-08-10 | 2012-08-10 | 0d |  |  | Carole Poland |  |  |  |  |  |
| 5 | 2 | **Editorial** |  | 30d | 2012-08-23 | 2012-10-03 | 1 |  | 2012-08-13 | 2012-09-21 | 30d | 0d |  |  | 240h |  | 3,520 | 3,520 |  |
| 6 | 2.1 | Organize manuscript for copyedit |  | 5d | 2012-08-23 | 2012-08-29 |  |  | 2012-08-13 | 2012-08-17 | 5d | 0d |  | Robin Wood | 40h |  | 1,760 | 1,760 |  |
| 7 | 2.2 | Copyedit |  | 20d | 2012-08-30 | 2012-09-26 | 6 |  | 2012-08-20 | 2012-09-14 | 20d | 0d |  | Copyeditors | 160h |  |  |  |  |
| 8 | 2.3 | Copyedit incorp |  | 5d | 2012-09-27 | 2012-10-03 | 7 |  | 2012-09-17 | 2012-09-21 | 5d | 0d |  | Robin Wood | 40h |  | 1,760 | 1,760 |  |
| 9 | 2.4 | Handoff to Production | milestone | 0d | 2012-10-03 | 2012-10-03 | 8 |  | 2012-09-21 | 2012-09-21 | 0d | 0d |  | Robin Wood |  |  |  |  |  |
| 10 | 3 | **Design and Production** |  | 20d | 2012-08-23 | 2012-09-19 | 5SS |  | 2012-08-13 | 2012-09-07 | 20d | 10d |  |  | 320h |  | 16,160 | 16,160 |  |
| 11 | 3.1 | Cover design |  | 5d | 2012-08-23 | 2012-08-29 |  |  | 2012-08-13 | 2012-08-17 | 5d | 12d | 0d | William Flash | 40h |  | 2,200 | 2,200 |  |
| 12 | 3.2 | Set pages |  | 10d | 2012-08-30 | 2012-09-12 | 11 |  | 2012-08-20 | 2012-08-31 | 10d | 10d | 0d | Robin Wood; Katie Jordan | 160h |  | 7,360 | 7,360 |  |
| 13 | 3.3 | Interior illustration design |  | 15d | 2012-08-30 | 2012-09-19 | 12SS |  | 2012-08-20 | 2012-09-07 | 15d | 12d |  | William Flash | 120h |  | 6,600 | 6,600 |  |
| 14 | 4 | **Pages review** |  | 20d | 2012-10-04 | 2012-10-31 | 10, 5 |  | 2012-09-24 | 2012-10-19 | 20d | 0d |  |  | 280h |  | 14,580 | 14,580 |  |
| 15 | 4.1 | Proofread and index |  | 10d | 2012-10-04 | 2012-10-17 |  |  | 2012-09-24 | 2012-10-05 | 10d | 0d |  | John Evans; Katie Jordan | 160h |  | 8,800 | 8,800 |  |
| 16 | 4.2 | Incorporate 1st Pages review |  | 5d | 2012-10-18 | 2012-10-24 | 15 |  | 2012-10-08 | 2012-10-12 | 5d | 0d |  | Carole Poland | 40h |  | 2,100 | 2,100 |  |
| 17 | 4.3 | Send proofed pages to Production | milestone | 0d | 2012-10-24 | 2012-10-24 | 16 |  | 2012-10-12 | 2012-10-12 | 0d | 0d |  | Robin Wood |  |  |  |  |  |
| 18 | 4.4 | Enter page corrections and index |  | 5d | 2012-10-25 | 2012-10-31 | 17 |  | 2012-10-15 | 2012-10-19 | 5d | 0d |  | Katie Jordan; Robin Wood | 80h |  | 3,680 | 3,680 |  |
| 19 | 4.5 | Send to print service | milestone | 0d | 2012-10-31 | 2012-10-31 | 18 |  |  |  |  | 0d |  |  |  |  |  |  |  |
