# Simple Resources

Schedule from MS Project XML, 2012-01-02 to 2012-03-01.
New book launch schedule
Lucerne Publishing

## Calendars

- Standard: Mon-Fri 08:00-12:00, 13:00-17:00; Sat-Sun off. Exceptions (off unless hours are given): 2012-01-19 (Staff at morale event).

## Schedule

| ID | WBS | Task | Type | Duration | Start | Finish | Predecessors | Total slack | Free slack |
| --- | --- | --- | --- | --- | --- | --- | --- | --- | --- |
| 1 | 1 | **Planning Phase** |  | 11d | 2012-01-02 | 2012-01-16 |  | 0d |  |
| 2 | 1.1 | Assign launch team members |  | 1d | 2012-01-02 | 2012-01-02 |  | -2d | 0d |
| 3 | 1.2 | Complete author questionnaire |  | 1w | 2012-01-03 | 2012-01-09 | 2 | 3d |  |
| 4 | 1.3 | Schedule author interviews |  | 1w | 2012-01-03 | 2012-01-09 | 2 | 3d |  |
| 5 | 1.4 | Design and order marketing material |  | 2w | 2012-01-03 | 2012-01-16 | 2 | -2d | 0d |
| 6 | 1.5 | Planning complete! | milestone | 0d | 2012-01-16 | 2012-01-16 | 5 | -2d | 0d |
| 7 | 2 | **Internal Launch Phase** |  | 20d | 2012-01-17 | 2012-02-14 | 1 | 0d |  |
| 8 | 2.1 | Kickoff book launch meeting |  | 1d | 2012-01-17 | 2012-01-17 |  | 0d |  |
| 9 | 2.2 | Plan author's travel itinerary |  | 3d | 2012-01-18 | 2012-01-23 | 8 | 16d |  |
| 10 | 2.3 | Channel Sales prep |  | 1w | 2012-01-18 | 2012-01-25 | 8 | 0d |  |
| 11 | 2.4 | Complete book launch form |  | 2d | 2012-01-26 | 2012-01-27 | 10 | 12d |  |
| 12 | 2.5 | Prepare book sales kit |  | 2.4w | 2012-01-26 | 2012-02-10 | 8, 10 | 0d |  |
| 13 | 2.6 | Distribute internal marketing material |  | 2d | 2012-02-13 | 2012-02-14 | 12 | 0d |  |
| 14 | 3 | **Public Launch Phase** |  | 12d | 2012-02-15 | 2012-03-01 | 7 | 0d |  |
| 15 | 3.1 | **Author travel and appearances** |  | 2d | 2012-02-15 | 2012-02-16 |  | 10d |  |
| 16 | 3.1.1 | Author radio interview |  | 1d | 2012-02-15 | 2012-02-15 |  | 8d | 0d |
| 17 | 3.1.2 | Author reading and signing at book fair |  | 1d | 2012-02-16 | 2012-02-16 | 16 | 8d | 0d |
| 18 | 3.2 | Distribute advance copies |  | 2d | 2012-02-15 | 2012-02-16 |  | 10d |  |
| 19 | 3.3 | Distribute book sales kit |  | 2d | 2012-02-15 | 2012-02-16 |  | 0d |  |
| 20 | 3.4 | Coordinate magazine feature articles |  | 7d | 2012-02-17 | 2012-02-27 | 19 | 3d |  |
| 21 | 3.5 | Launch public Web portal for book |  | 1w | 2012-02-17 | 2012-02-23 | 19 | 0d |  |
| 22 | 3.6 | Launch social media programs for book |  | 1w | 2012-02-24 | 2012-03-01 | 21 | 0d |  |
| 23 | 3.7 | Launch complete! | milestone | 0d | 2012-03-01 | 2012-03-01 | 20, 21, 22 | 0d |  |

Notes:
- 18: Get recipient list from publicist
